# Kế hoạch triển khai hệ thống quản lý khách sạn realtime

Schedule from MS Project, 2026-09-08 to 2026-10-27, status date 2026-10-03, costs in VND, A marks actual dates.
Bang tien do du an Khach San Sach
WPCTeam

## Calendars

- Lich Khach San Di Dong: Mon-Fri 08:00-12:00, 13:00-17:00; Sat off; Sun 08:00-12:00, 13:00-17:00. Exceptions (off unless hours are given): 2026-09-10 08:00-12:00 (Nghi Le Mat Tran To Quoc VietNam).

## Resources

| Resource | Group | Unit | Rate |
| --- | --- | --- | --- |
| Đạt | WPC |  | 50000 |
| Bảo | WPC |  | 40000 |
| Hoàng | WPC |  | 45000 |
| VPS | Deploy | 1 | 200000 |
| Domain | Deploy | 1 | 160000 |
| Phụ Cấp Tăng Ca | PC |  |  |

## Schedule

| ID | WBS | Task | Type | Duration | Start | Finish | Predecessors | Complete | Remaining | Baseline start | Baseline finish | Baseline duration | Baseline 1 start | Baseline 1 finish | Total slack | Constraint | Deadline | Resources | Work | Actual work | Cost | Baseline cost | Actual cost | Text1 | Text2 | Text3 | Text4 |
| --- | --- | --- | --- | --- | --- | --- | --- | --- | --- | --- | --- | --- | --- | --- | --- | --- | --- | --- | --- | --- | --- | --- | --- | --- | --- | --- | --- |
| 1 | 1 | **Phụ Cấp Tăng Ca** |  | 4.5d | 2026-09-08 08:00 A | 2026-09-14 08:00 A |  | 100% |  |  |  |  |  |  |  |  |  |  |  |  | 800,000 |  | 800,000 |  |  |  |  |
| 2 | 1.1 | PC-140926 | milestone, manual | 0d | 2026-09-14 08:00 A | 2026-09-14 08:00 A |  | 100% |  |  |  |  |  |  |  | finish no earlier than 2026-09-14 17:00 |  | Phụ Cấp Tăng Ca |  |  | 400,000 |  | 400,000 |  |  |  |  |
| 3 | 1.2 | PC-150926 | milestone, manual | 0d | 2026-09-08 08:00 A | 2026-09-08 08:00 A |  | 100% |  |  |  |  |  |  |  |  |  | Phụ Cấp Tăng Ca |  |  | 400,000 |  | 400,000 |  |  |  |  |
| 4 | 1 | **Khách Sạn Di Động — MVP quản lý phòng realtime** |  | 41.88d | 2026-09-08 08:00 A | 2026-10-27 11:00 |  | 56% | 18.47d | 2026-09-08 08:00 | 2026-10-27 11:00 | 41.88d | 2026-09-08 08:00 | 2026-10-27 11:00 | 0d |  |  |  | 584h | 310.4h | 26,480,000 | 14,790,000 | 14,046,500 |  |  |  |  |
| 5 | 1.2 | **Sprint 1 — Nền tảng (08/09–21/09/2026)** |  | 16.88d | 2026-09-08 08:00 A | 2026-09-28 11:00 |  | 95% | 0.88d | 2026-09-08 08:00 | 2026-09-29 16:00 | 18.38d | 2026-09-08 08:00 | 2026-09-29 16:00 | 0d |  | 2026-09-21 17:00 |  | 177h | 167.5h | 8,065,000 | 4,405,000 | 7,632,500 |  |  |  |  |
| 6 | 1.2.1 | **Khảo sát, kickoff, phỏng vấn, AS-IS/TO-BE, requirement và sign-off** |  | 7.88d | 2026-09-09 08:00 A | 2026-09-18 11:00 |  | 95% | 0.39d | 2026-09-09 08:00 | 2026-09-29 16:00 | 17.38d | 2026-09-09 08:00 | 2026-09-29 16:00 | 2.62d |  |  |  | 54h | 51h | 2,700,000 | 1,530,000 | 2,550,000 |  |  |  |  |
| 7 | 1.2.1.2 | Lập lịch kickoff và lịch phỏng vấn riêng cho quản lý, lễ tân, buồng phòng, bảo trì |  | 1h | 2026-09-09 08:00 A | 2026-09-09 09:00 A | 31 | 100% |  | 2026-09-09 08:00 | 2026-09-09 09:00 | 1h | 2026-09-09 08:00 | 2026-09-09 09:00 |  | start no earlier than 2026-09-09 08:00 |  | Đạt | 1h | 1h | 50,000 | 30,000 | 50,000 | S1-DAT-018 | S1 | Cần đối chiếu | Interview plan: người, mục tiêu, thời lượng |
| 8 | 1.2.1.3 | Soạn bộ câu hỏi phỏng vấn quản lý về KPI phòng, dashboard, phân quyền và escalation |  | 2h | 2026-09-09 09:00 A | 2026-09-09 11:00 A | 7 | 100% |  | 2026-09-09 09:00 | 2026-09-09 11:00 | 2h | 2026-09-09 09:00 | 2026-09-09 11:00 |  | finish no earlier than 2026-09-08 12:00 |  | Đạt | 2h | 2h | 100,000 | 60,000 | 100,000 | S1-DAT-019 | S1 | Cần đối chiếu | Questionnaire quản lý |
| 9 | 1.2.1.4 | Soạn bộ câu hỏi phỏng vấn lễ tân về nhận phòng, trả phòng và điều kiện phòng sẵn sàng |  | 2h | 2026-09-09 11:00 A | 2026-09-09 14:00 A | 7, 8 | 100% |  | 2026-09-09 11:00 | 2026-09-09 14:00 | 2h | 2026-09-09 11:00 | 2026-09-09 14:00 |  | finish no earlier than 2026-09-08 15:00 |  | Đạt | 2h | 2h | 100,000 | 60,000 | 100,000 | S1-DAT-020 | S1 | Cần đối chiếu | Questionnaire lễ tân |
| 10 | 1.2.1.5 | Soạn bộ câu hỏi phỏng vấn nhân viên buồng phòng về giao việc, thời gian dọn và thao tác Android |  | 2h | 2026-09-09 14:00 A | 2026-09-09 16:00 A | 7, 9 | 100% |  | 2026-09-09 14:00 | 2026-09-09 16:00 | 2h | 2026-09-09 14:00 | 2026-09-09 16:00 |  | start no earlier than 2026-09-08 15:00 |  | Đạt | 2h | 2h | 100,000 | 60,000 | 100,000 | S1-DAT-021 | S1 | Cần đối chiếu | Questionnaire buồng phòng |
| 11 | 1.2.1.6 | Soạn bộ câu hỏi phỏng vấn nhân viên bảo trì về báo hỏng, mức ảnh hưởng và mở lại phòng |  | 2h | 2026-09-10 08:00 A | 2026-09-10 10:00 A | 7, 10 | 100% |  | 2026-09-09 16:00 | 2026-09-10 09:00 | 2h | 2026-09-09 16:00 | 2026-09-10 09:00 |  | finish no earlier than 2026-09-09 10:00 |  | Đạt | 2h | 2h | 100,000 | 60,000 | 100,000 | S1-DAT-022 | S1 | Cần đối chiếu | Questionnaire bảo trì |
| 12 | 1.2.1.7 | Tổ chức kickoff, ghi mục tiêu MVP, hạn bàn giao + Phỏng vấn quản lý về dashboard 50 phòng và cách + Phỏng vấn lễ tân về check-in, check-out, tra cứu |  | 6h | 2026-09-11 08:00 A | 2026-09-11 15:00 A | 11, 8, 9, 31 | 100% |  | 2026-09-10 09:00 | 2026-09-11 11:00 | 6h | 2026-09-10 09:00 | 2026-09-11 11:00 |  | finish no earlier than 2026-09-09 12:00 |  | Đạt | 6h | 6h | 300,000 | 180,000 | 300,000 | S1-DAT-023 | S1 | Cần đối chiếu | Biên bản kickoff |
| 13 | 1.2.1.10 | Phỏng vấn nhân viên buồng phòng về nhận việc, hoàn tất dọn và thao tác tối đa chấp nhận |  | 2h | 2026-09-11 11:00 A | 2026-09-11 14:00 A | 10, 12 | 100% |  | 2026-09-11 11:00 | 2026-09-11 14:00 | 2h | 2026-09-11 11:00 | 2026-09-11 14:00 |  | finish no earlier than 2026-09-10 10:00 |  | Đạt | 2h | 2h | 100,000 | 60,000 | 100,000 | S1-DAT-026 | S1 | Cần đối chiếu | Interview notes buồng phòng |
| 14 | 1.2.1.11 | Phỏng vấn nhân viên bảo trì về báo hỏng, đóng việc và điều kiện ngừng phục vụ phòng |  | 2h | 2026-09-11 14:00 A | 2026-09-11 16:00 A | 11, 13 | 100% |  | 2026-09-11 14:00 | 2026-09-11 16:00 | 2h | 2026-09-11 14:00 | 2026-09-11 16:00 |  | finish no earlier than 2026-09-10 12:00 |  | Đạt | 2h | 2h | 100,000 | 60,000 | 100,000 | S1-DAT-027 | S1 | Cần đối chiếu | Interview notes bảo trì |
| 15 | 1.2.1.12 | Quan sát hoặc mô phỏng AS-IS một ca làm việc từ quầy lễ tân tới buồng phòng và bảo trì |  | 3h | 2026-09-11 16:00 A | 2026-09-13 10:00 | 12, 14 |  | 3h | 2026-09-11 16:00 | 2026-09-13 10:00 | 3h | 2026-09-11 16:00 | 2026-09-13 10:00 | 7.75d | finish no earlier than 2026-09-10 16:00 |  | Đạt | 3h |  | 150,000 |  |  | S1-DAT-028 | S1 | Cần đối chiếu | AS-IS flow, điểm nghẽn, dữ liệu vào/ra |
| 16 | 1.2.1.13 | Lập problem statement và opportunity backlog, gắn từng pain point với feature MVP |  | 2h | 2026-09-13 10:00 A | 2026-09-13 12:00 A | 13, 14, 15, 12 | 100% |  | 2026-09-13 10:00 | 2026-09-13 12:00 | 2h | 2026-09-13 10:00 | 2026-09-13 12:00 |  | finish no earlier than 2026-09-11 09:00 |  | Đạt | 1h | 1h | 50,000 | 30,000 | 50,000 | S1-DAT-029 | S1 | Cần đối chiếu | Problem statement liên kết feature |
| 17 | 1.2.1.14 | Chuẩn hóa glossary và định nghĩa 3 trục trạng thái phòng: lưu trú, vệ sinh, bảo trì |  | 2h | 2026-09-13 13:00 A | 2026-09-13 15:00 A | 16 | 100% |  | 2026-09-13 13:00 | 2026-09-13 15:00 | 2h | 2026-09-13 13:00 | 2026-09-13 15:00 |  | finish no earlier than 2026-09-11 11:00 |  | Đạt | 2h | 2h | 100,000 | 60,000 | 100,000 | S1-DAT-030 | S1 | Cần đối chiếu | Glossary được khách hàng xác nhận |
| 18 | 1.2.1.15 | Thu thập functional requirement và business rule + Đánh giá khả thi Socket.IO, transaction PostgreS |  | 5h | 2026-09-13 15:00 A | 2026-09-14 11:00 A | 16, 17 | 100% |  | 2026-09-13 15:00 | 2026-09-14 11:00 | 5h | 2026-09-13 15:00 | 2026-09-14 11:00 |  | finish no earlier than 2026-09-11 16:00 |  | Đạt | 5h | 5h | 250,000 | 150,000 | 250,000 | S1-DAT-031 | S1 | Cần đối chiếu | Requirement matrix |
| 19 | 1.2.1.17 | Phân loại MoSCoW và chốt non-goal MVP với khách hàng, gồm iOS nằm ngoài phạm vi |  | 2h | 2026-09-14 11:00 A | 2026-09-14 14:00 A | 18, 16 | 100% |  | 2026-09-14 11:00 | 2026-09-14 14:00 | 2h | 2026-09-14 11:00 | 2026-09-14 14:00 |  | finish no earlier than 2026-09-14 11:00 |  | Đạt | 2h | 2h | 100,000 | 60,000 | 100,000 | S1-DAT-033 | S1 | Cần đối chiếu | Scope baseline được phê duyệt |
| 20 | 1.2.1.18 | Mở sổ Open Question, assumption và decision: owner, hạn chốt, tác động nếu chưa chốt |  | 2h | 2026-09-14 14:00 A | 2026-09-14 16:00 A | 16, 19 | 100% |  | 2026-09-14 14:00 | 2026-09-14 16:00 | 2h | 2026-09-14 14:00 | 2026-09-14 16:00 |  | finish no earlier than 2026-09-14 14:00 |  | Đạt | 2h | 2h | 100,000 | 60,000 | 100,000 | S1-DAT-034 | S1 | Cần đối chiếu | OQ register |
| 21 | 1.2.1.19 | Workshop xác nhận quy trình TO-BE và các exception flow nhận phòng, dọn, bảo trì |  | 3h | 2026-09-15 08:00 A | 2026-09-15 11:00 A | 17, 18, 19, 20, 16 | 100% |  | 2026-09-14 16:00 | 2026-09-15 10:00 | 3h | 2026-09-15 08:00 | 2026-09-15 11:00 |  | finish no earlier than 2026-09-14 17:00 |  | Đạt | 3h | 3h | 150,000 | 90,000 | 150,000 | S1-DAT-035 | S1 | Cần đối chiếu | Biên bản workshop TO-BE |
| 22 | 1.2.1.20 | Thu thập sign-off requirement baseline: ngày duyệt, người duyệt, phạm vi 4 sprint |  | 1h | 2026-09-15 10:00 A | 2026-09-15 11:00 A | 21 | 100% |  | 2026-09-15 10:00 | 2026-09-15 11:00 | 1h | 2026-09-15 10:00 | 2026-09-15 11:00 |  | finish no earlier than 2026-09-15 09:00 |  | Đạt | 1h | 1h | 50,000 | 30,000 | 50,000 | S1-DAT-036 | S1 | Cần đối chiếu | Biên bản hoặc email phê duyệt baseline |
| 23 | 1.2.1.21 | Khảo sát bối cảnh dùng Flutter Web tại quầy và Android tại hành lang, buồng, kỹ thuật |  | 2h | 2026-09-17 08:00 A | 2026-09-17 10:00 A | 12SF, 68 | 100% |  | 2026-09-17 08:00 | 2026-09-17 17:00 | 2h | 2026-09-17 08:00 | 2026-09-17 10:00 |  | finish no earlier than 2026-09-16 17:00 |  | Đạt | 2h | 2h | 100,000 | 60,000 | 100,000 | S1-HOANG-016 | S1 | Cần đối chiếu | Context-of-use: thiết bị, mạng, ánh sáng, thao tác một tay |
| 24 | 1.2.1.22 | Dựng persona quản lý, lễ tân, nhân viên hiện trường và journey map từ phỏng vấn |  | 8h | 2026-09-17 08:00 A | 2026-09-17 17:00 A | 13, 14, 23, 12 | 100% |  | 2026-09-18 08:00 | 2026-09-18 17:00 | 3h | 2026-09-17 08:00 | 2026-09-17 17:00 |  | finish no earlier than 2026-09-16 17:00 |  | Đạt | 3h | 3h | 150,000 | 90,000 | 150,000 | S1-HOANG-017 | S1 | Cần đối chiếu | Persona và journey có pain point |
| 25 | 1.2.1.23 | Usability review wireframe ASCII với người dùng đại diện, ghi issue và mức độ |  | 3h | 2026-09-18 08:00 A | 2026-09-18 11:00 A | 24 | 100% |  | 2026-09-17 08:00 | 2026-09-17 17:00 | 3h | 2026-09-18 08:00 | 2026-09-18 11:00 |  | finish no earlier than 2026-09-16 17:00 |  | Đạt | 3h | 3h | 150,000 | 90,000 | 150,000 | S1-HOANG-018 | S1 | Cần đối chiếu | Feedback log: sửa hoặc giữ |
| 26 | 1.2.1.24 | Rà Design Token có đủ màu 3 trục trạng thái phòng và mức tương phản accessibility |  | 2h | 2026-09-18 08:00 A | 2026-09-18 10:00 A | 17, 25 | 100% |  | 2026-09-18 08:00 | 2026-09-18 17:00 | 2h | 2026-09-18 08:00 | 2026-09-18 10:00 |  | finish no earlier than 2026-09-16 17:00 |  | Đạt | 2h | 2h | 100,000 | 60,000 | 100,000 | S1-HOANG-019 | S1 | Cần đối chiếu | Token gap list |
| 27 | 1.2.1.25 | Chốt yêu cầu responsive Web và touch target Android từ bối cảnh quầy và hiện trường |  | 2h | 2026-09-18 08:00 A | 2026-09-18 10:00 A | 24, 26 | 100% |  | 2026-09-18 08:00 | 2026-09-18 17:00 | 2h | 2026-09-29 14:00 | 2026-09-29 16:00 |  | finish no earlier than 2026-09-18 17:00 |  | Đạt | 2h | 2h | 100,000 | 60,000 | 100,000 | S1-HOANG-020 | S1 | Cần đối chiếu | UI acceptance checklist Web/Android |
| 28 | 1.2.1.27 | Xác nhận dữ liệu tối thiểu được lưu và dữ liệu không được lưu, gồm giấy tờ khách |  | 2h | 2026-09-14 11:00 A | 2026-09-14 14:00 A | 18 | 100% |  | 2026-09-14 11:00 | 2026-09-14 14:00 | 2h | 2026-09-14 11:00 | 2026-09-14 14:00 |  | finish no earlier than 2026-09-14 12:00 |  | Đạt | 2h | 2h | 100,000 | 60,000 | 100,000 | S1-BAO-022 | S1 | Cần đối chiếu | Data classification và retention |
| 29 | 1.2.1.28 | Rà assumption API nội bộ và OpenAI: hạn mức chi phí, timeout, phương án fallback |  | 2h | 2026-09-14 14:00 A | 2026-09-14 16:00 A | 28 | 100% |  | 2026-09-14 14:00 | 2026-09-14 16:00 | 2h | 2026-09-14 14:00 | 2026-09-14 16:00 |  | finish no earlier than 2026-09-14 15:00 |  | Đạt | 2h | 2h | 100,000 | 60,000 | 100,000 | S1-BAO-023 | S1 | Cần đối chiếu | Integration assumption và cost limit |

Notes:
- 7: Mã: S1-DAT-018 / Trạng thái: Cần đối chiếu / Đầu ra: Interview plan: người, mục tiêu, thời lượng / Bằng chứng: chưa có trong repository tại 24/09/2026 / Quan hệ gồm FS, SS, FF và SF. Việc ghi dữ liệu đi qua API, kiểm quyền, ghi audit, rồi mới phát Socket.IO.
- 8: Mã: S1-DAT-019 / Trạng thái: Cần đối chiếu / Đầu ra: Questionnaire quản lý / Bằng chứng: chưa có trong repository tại 24/09/2026 / Quan hệ gồm FS, SS, FF và SF. Việc ghi dữ liệu đi qua API, kiểm quyền, ghi audit, rồi mới phát Socket.IO.
- 9: Mã: S1-DAT-020 / Trạng thái: Cần đối chiếu / Đầu ra: Questionnaire lễ tân / Bằng chứng: chưa có trong repository tại 24/09/2026 / Quan hệ gồm FS, SS, FF và SF. Việc ghi dữ liệu đi qua API, kiểm quyền, ghi audit, rồi mới phát Socket.IO.
- 10: Mã: S1-DAT-021 / Trạng thái: Cần đối chiếu / Đầu ra: Questionnaire buồng phòng / Bằng chứng: chưa có trong repository tại 24/09/2026 / Quan hệ gồm FS, SS, FF và SF. Việc ghi dữ liệu đi qua API, kiểm quyền, ghi audit, rồi mới phát Socket.IO.
- 11: Mã: S1-DAT-022 / Trạng thái: Cần đối chiếu / Đầu ra: Questionnaire bảo trì / Bằng chứng: chưa có trong repository tại 24/09/2026 / Quan hệ gồm FS, SS, FF và SF. Việc ghi dữ liệu đi qua API, kiểm quyền, ghi audit, rồi mới phát Socket.IO.
- 12: Mã: S1-DAT-023 / Trạng thái: Cần đối chiếu / Đầu ra: Biên bản kickoff / Bằng chứng: chưa có trong repository tại 24/09/2026 / Quan hệ gồm FS, SS, FF và SF. Việc ghi dữ liệu đi qua API, kiểm quyền, ghi audit, rồi mới phát Socket.IO.
- 13: Mã: S1-DAT-026 / Trạng thái: Cần đối chiếu / Đầu ra: Interview notes buồng phòng / Bằng chứng: chưa có trong repository tại 24/09/2026 / Quan hệ gồm FS, SS, FF và SF. Việc ghi dữ liệu đi qua API, kiểm quyền, ghi audit, rồi mới phát Socket.IO.
- 14: Mã: S1-DAT-027 / Trạng thái: Cần đối chiếu / Đầu ra: Interview notes bảo trì / Bằng chứng: chưa có trong repository tại 24/09/2026 / Quan hệ gồm FS, SS, FF và SF. Việc ghi dữ liệu đi qua API, kiểm quyền, ghi audit, rồi mới phát Socket.IO.
- 15: Mã: S1-DAT-028 / Trạng thái: Cần đối chiếu / Đầu ra: AS-IS flow, điểm nghẽn, dữ liệu vào/ra / Bằng chứng: chưa có trong repository tại 24/09/2026 / Quan hệ gồm FS, SS, FF và SF. Việc ghi dữ liệu đi qua API, kiểm quyền, ghi audit, rồi mới phát Socket.IO.
- 16: Mã: S1-DAT-029 / Trạng thái: Cần đối chiếu / Đầu ra: Problem statement liên kết feature / Bằng chứng: chưa có trong repository tại 24/09/2026 / Quan hệ gồm FS, SS, FF và SF. Việc ghi dữ liệu đi qua API, kiểm quyền, ghi audit, rồi mới phát Socket.IO.
- 17: Mã: S1-DAT-030 / Trạng thái: Cần đối chiếu / Đầu ra: Glossary được khách hàng xác nhận / Bằng chứng: chưa có trong repository tại 24/09/2026 / Quan hệ gồm FS, SS, FF và SF. Việc ghi dữ liệu đi qua API, kiểm quyền, ghi audit, rồi mới phát Socket.IO.
- 18: Mã: S1-DAT-031 / Trạng thái: Cần đối chiếu / Đầu ra: Requirement matrix / Bằng chứng: chưa có trong repository tại 24/09/2026 / Quan hệ gồm FS, SS, FF và SF. Việc ghi dữ liệu đi qua API, kiểm quyền, ghi audit, rồi mới phát Socket.IO.
- 19: Mã: S1-DAT-033 / Trạng thái: Cần đối chiếu / Đầu ra: Scope baseline được phê duyệt / Bằng chứng: chưa có trong repository tại 24/09/2026 / Quan hệ gồm FS, SS, FF và SF. Việc ghi dữ liệu đi qua API, kiểm quyền, ghi audit, rồi mới phát Socket.IO.
- 20: Mã: S1-DAT-034 / Trạng thái: Cần đối chiếu / Đầu ra: OQ register / Bằng chứng: chưa có trong repository tại 24/09/2026 / Quan hệ gồm FS, SS, FF và SF. Việc ghi dữ liệu đi qua API, kiểm quyền, ghi audit, rồi mới phát Socket.IO.
- 21: Mã: S1-DAT-035 / Trạng thái: Cần đối chiếu / Đầu ra: Biên bản workshop TO-BE / Bằng chứng: chưa có trong repository tại 24/09/2026 / Quan hệ gồm FS, SS, FF và SF. Việc ghi dữ liệu đi qua API, kiểm quyền, ghi audit, rồi mới phát Socket.IO.
- 22: Mã: S1-DAT-036 / Trạng thái: Cần đối chiếu / Đầu ra: Biên bản hoặc email phê duyệt baseline / Bằng chứng: chưa có trong repository tại 24/09/2026 / Quan hệ gồm FS, SS, FF và SF. Việc ghi dữ liệu đi qua API, kiểm quyền, ghi audit, rồi mới phát Socket.IO.
- 23: Mã: S1-HOANG-016 / Trạng thái: Cần đối chiếu / Đầu ra: Context-of-use: thiết bị, mạng, ánh sáng, thao tác một tay / Bằng chứng: chưa có trong repository tại 24/09/2026 / Quan hệ gồm FS, SS, FF và SF. Việc ghi dữ liệu đi qua API, kiểm quyền, ghi audit, rồi mới phát Socket.IO.
- 24: Mã: S1-HOANG-017 / Trạng thái: Cần đối chiếu / Đầu ra: Persona và journey có pain point / Bằng chứng: chưa có trong repository tại 24/09/2026 / Quan hệ gồm FS, SS, FF và SF. Việc ghi dữ liệu đi qua API, kiểm quyền, ghi audit, rồi mới phát Socket.IO.
- 25: Mã: S1-HOANG-018 / Trạng thái: Cần đối chiếu / Đầu ra: Feedback log: sửa hoặc giữ / Bằng chứng: chưa có trong repository tại 24/09/2026 / Quan hệ gồm FS, SS, FF và SF. Việc ghi dữ liệu đi qua API, kiểm quyền, ghi audit, rồi mới phát Socket.IO.
- 26: Mã: S1-HOANG-019 / Trạng thái: Cần đối chiếu / Đầu ra: Token gap list / Bằng chứng: chưa có trong repository tại 24/09/2026 / Quan hệ gồm FS, SS, FF và SF. Việc ghi dữ liệu đi qua API, kiểm quyền, ghi audit, rồi mới phát Socket.IO.
- 27: Mã: S1-HOANG-020 / Trạng thái: Cần đối chiếu / Đầu ra: UI acceptance checklist Web/Android / Bằng chứng: chưa có trong repository tại 24/09/2026 / Quan hệ gồm FS, SS, FF và SF. Việc ghi dữ liệu đi qua API, kiểm quyền, ghi audit, rồi mới phát Socket.IO.
- 28: Mã: S1-BAO-022 / Trạng thái: Cần đối chiếu / Đầu ra: Data classification và retention / Bằng chứng: chưa có trong repository tại 24/09/2026 / Quan hệ gồm FS, SS, FF và SF. Việc ghi dữ liệu đi qua API, kiểm quyền, ghi audit, rồi mới phát Socket.IO.
- 29: Mã: S1-BAO-023 / Trạng thái: Cần đối chiếu / Đầu ra: Integration assumption và cost limit / Bằng chứng: chưa có trong repository tại 24/09/2026 / Quan hệ gồm FS, SS, FF và SF. Việc ghi dữ liệu đi qua API, kiểm quyền, ghi audit, rồi mới phát Socket.IO.

| ID | WBS | Task | Type | Duration | Start | Finish | Predecessors | Complete | Remaining | Baseline start | Baseline finish | Baseline duration | Baseline 1 start | Baseline 1 finish | Total slack | Free slack | Constraint | Resources | Work | Actual work | Cost | Baseline cost | Actual cost | Text1 | Text2 | Text3 | Text4 |
| --- | --- | --- | --- | --- | --- | --- | --- | --- | --- | --- | --- | --- | --- | --- | --- | --- | --- | --- | --- | --- | --- | --- | --- | --- | --- | --- | --- |
| 30 | 1.2.2 | **Artefact nghiệp vụ Đạt đã có bằng chứng trong repository** |  | 1d | 2026-09-08 08:00 A | 2026-09-08 17:00 A |  | 100% |  | 2026-09-08 08:00 | 2026-09-08 17:00 | 1d | 2026-09-08 08:00 | 2026-09-08 17:00 |  |  |  |  | 8h | 8h | 400,000 | 240,000 | 400,000 |  |  |  |  |
| 31 | 1.2.2.6 | Xác định sponsor, người quyết định và stakeholde + Chốt MVP: 3 vai trò, 3 trục trạng thái phòng, dữ |  | 1d | 2026-09-08 08:00 A | 2026-09-08 17:00 A |  | 100% |  | 2026-09-08 08:00 | 2026-09-08 17:00 | 1d | 2026-09-08 08:00 | 2026-09-08 17:00 |  |  |  | Đạt | 8h | 8h | 400,000 | 240,000 | 400,000 | S1-DAT-006 | S1 | Đã xong | Design Token guideline |
| 32 | 1.2.3 | **Kiến trúc, contract API, môi trường dev/staging** |  | 3.62d | 2026-09-15 11:00 A | 2026-09-18 17:00 |  | 99% | 0.05d | 2026-09-15 11:00 | 2026-09-17 12:00 | 2.12d | 2026-09-15 11:00 | 2026-09-17 12:00 | 2d |  |  |  | 27h | 26.6h | 1,215,000 | 225,000 | 1,197,000 |  |  |  |  |
| 33 | 1.2.3.1 | Chốt monorepo apps/api (Express/TypeScript) và apps/mobile (Flutter Web + Android) |  | 2h | 2026-09-15 11:00 A | 2026-09-15 14:00 A | 22 | 100% |  | 2026-09-15 11:00 | 2026-09-15 14:00 | 2h | 2026-09-15 11:00 | 2026-09-15 14:00 |  |  | finish no earlier than 2026-09-15 11:00 | Hoàng | 2h | 2h | 90,000 | 50,000 | 90,000 | S1-DAT-007 | S1 | Cần đối chiếu | docs/architecture.md và cây thư mục |
| 34 | 1.2.3.2 | Viết ADR monorepo: trách nhiệm module API, Prisma, Flutter Web và Android |  | 1h | 2026-09-17 11:00 A | 2026-09-17 12:00 | 33, 35 | 60% | 0.4h | 2026-09-17 11:00 | 2026-09-17 12:00 | 1h | 2026-09-17 11:00 | 2026-09-17 12:00 | 3.5d |  | finish no earlier than 2026-09-16 17:00 | Hoàng | 1h | 0.6h | 45,000 | 25,000 | 27,000 | S1-DAT-014 | S1 | Cần đối chiếu | ADR có rationale và owner |
| 35 | 1.2.3.9 | Mô tả môi trường dev và staging: PostgreSQL, biế + Thêm middleware validate request: payload sai tr + Thêm global exception handler và correlation ID, + Publish Design Token guideline vào docs/design-t + Dựng Prisma baseline: schema, nam... |  | 24h | 2026-09-16 08:00 A | 2026-09-18 17:00 A | 33, 38, 37, 31 | 100% |  | 2026-09-16 14:00 | 2026-09-17 11:00 | 6h | 2026-09-16 08:00 | 2026-09-16 15:00 |  |  | finish no earlier than 2026-09-16 14:00 | Hoàng | 24h | 24h | 1,080,000 | 150,000 | 1,080,000 | S1-DAT-012 | S1 | Cần đối chiếu | docs/runbooks/environment.md |
| 36 | 1.2.4 | **Backend: Express, Prisma, auth, RBAC, danh mục phòng, Socket.IO** |  | 7.12d | 2026-09-15 14:00 A | 2026-09-23 15:00 |  | 91% | 0.64d | 2026-09-15 14:00 | 2026-09-23 15:00 | 7.12d | 2026-09-15 14:00 | 2026-09-23 15:00 | 0d |  |  |  | 46h | 41.9h | 2,070,000 | 1,150,000 | 1,885,500 |  |  |  |  |
| 37 | 1.2.4.1 | Chốt API error contract: HTTP code, body lỗi, fi + Bootstrap apps/api: Express, TypeScript strict, + Chốt enum dùng chung: role, occupancy, cleaning, + Validate biến môi trường lúc khởi động và tạo .e + Chốt chính sách phiên đăng nhập: t... |  | 6h | 2026-09-15 14:00 A | 2026-09-16 11:00 A | 33, 29 | 100% |  | 2026-09-15 14:00 | 2026-09-16 11:00 | 6h | 2026-09-15 14:00 | 2026-09-16 11:00 |  |  | finish no earlier than 2026-09-15 15:00 | Hoàng | 6h | 6h | 270,000 | 150,000 | 270,000 | S1-BAO-001 | S1 | Cần đối chiếu | apps/api/package.json và src/main.ts, build pass |
| 38 | 1.2.4.5 | Tạo GET /health và GET /ready; ready kiểm tra kế + Tạo Definition of Done và PR checklist: lint, te |  | 2h | 2026-09-16 11:00 A | 2026-09-16 14:00 A | 37, 31 | 100% |  | 2026-09-16 11:00 | 2026-09-16 14:00 | 2h | 2026-09-16 11:00 | 2026-09-16 14:00 |  |  | finish no earlier than 2026-09-16 10:00 | Hoàng | 2h | 2h | 90,000 | 50,000 | 90,000 | S1-BAO-003 | S1 | Cần đối chiếu | Test health/ready |
| 39 | 1.2.4.7 | Viết test kết nối database và transaction helper, bảo đảm rollback khi lỗi |  | 2h | 2026-09-20 10:00 A | 2026-09-20 12:00 A | 46, 35 | 100% |  | 2026-09-20 10:00 | 2026-09-20 12:00 | 2h | 2026-09-20 10:00 | 2026-09-20 12:00 |  |  | finish no earlier than 2026-09-18 17:00 | Hoàng | 2h | 2h | 90,000 | 50,000 | 90,000 | S1-BAO-018 | S1 | Cần đối chiếu | Test DB độc lập, rollback pass |
| 40 | 1.2.4.8 | Lập ma trận quyền API cho quản lý, lễ tân và nhâ + Migration User và Role: số điện thoại unique, cờ + Thêm checklist review migration Prisma: backup, |  | 2h | 2026-09-17 13:00 A | 2026-09-17 15:00 A | 35, 34, 37, 38 | 100% |  | 2026-09-17 13:00 | 2026-09-17 15:00 | 2h | 2026-09-17 13:00 | 2026-09-17 15:00 |  |  | finish no earlier than 2026-09-17 10:00 | Hoàng | 2h | 2h | 90,000 | 50,000 | 90,000 | S1-BAO-005 | S1 | Cần đối chiếu | Migration user/role |
| 41 | 1.2.4.9 | Migration RoomType và Room: số phòng unique, tầng, 3 enum trạng thái, cột version |  | 2h | 2026-09-17 15:00 A | 2026-09-17 17:00 A | 40, 35 | 100% |  | 2026-09-17 15:00 | 2026-09-17 17:00 | 2h | 2026-09-17 15:00 | 2026-09-17 17:00 |  |  | finish no earlier than 2026-09-17 12:00 | Hoàng | 2h | 2h | 90,000 | 50,000 | 90,000 | S1-BAO-006 | S1 | Cần đối chiếu | Migration room và test constraint |
| 42 | 1.2.4.10 | Seed idempotent: 3 vai trò, user demo, 50 phòng và loại phòng; chạy lại không nhân bản |  | 3h | 2026-09-18 08:00 A | 2026-09-18 11:00 A | 40, 41 | 100% |  | 2026-09-18 08:00 | 2026-09-18 11:00 | 3h | 2026-09-18 08:00 | 2026-09-18 11:00 |  |  | finish no earlier than 2026-09-17 16:00 | Hoàng | 3h | 3h | 135,000 | 75,000 | 135,000 | S1-BAO-007 | S1 | Cần đối chiếu | prisma/seed.ts |
| 43 | 1.2.4.11 | Cài password service bcrypt hoặc argon2; API không trả hash; có password policy |  | 2h | 2026-09-18 11:00 A | 2026-09-18 14:00 A | 40, 42 | 100% |  | 2026-09-18 11:00 | 2026-09-18 14:00 | 2h | 2026-09-18 11:00 | 2026-09-18 14:00 |  |  | finish no earlier than 2026-09-18 09:00 | Hoàng | 2h | 2h | 90,000 | 50,000 | 90,000 | S1-BAO-008 | S1 | Cần đối chiếu | Unit test password |
| 44 | 1.2.4.12 | Viết POST /auth/login: sai thông tin chung chung, từ chối user inactive, phát hành token |  | 3h | 2026-09-18 14:00 A | 2026-09-18 17:00 A | 43 | 100% |  | 2026-09-18 14:00 | 2026-09-18 17:00 | 3h | 2026-09-18 14:00 | 2026-09-18 17:00 |  |  | finish no earlier than 2026-09-18 12:00 | Hoàng | 3h | 3h | 135,000 | 75,000 | 135,000 | S1-BAO-009 | S1 | Cần đối chiếu | Test login |
| 45 | 1.2.4.13 | Thêm rate limit đăng nhập và ghi audit sự kiện login thành công hoặc thất bại |  | 2h | 2026-09-21 08:00 A | 2026-09-21 10:00 | 44, 39 | 60% | 0.8h | 2026-09-21 08:00 | 2026-09-21 10:00 | 2h | 2026-09-21 08:00 | 2026-09-21 10:00 | 0.19d | 0d | finish no earlier than 2026-09-21 10:00 | Hoàng | 2h | 1.2h | 90,000 | 50,000 | 54,000 | S1-BAO-019 | S1 | Cần đối chiếu | Test chặn brute-force |
| 46 | 1.2.4.14 | Viết auth middleware: verify token, gắn actor, từ chối token hết hạn |  | 2h | 2026-09-20 08:00 A | 2026-09-20 10:00 | 44 | 70% | 0.6h | 2026-09-20 08:00 | 2026-09-20 10:00 | 2h | 2026-09-20 08:00 | 2026-09-20 10:00 | 1.19d | 1d | finish no earlier than 2026-09-18 15:00 | Hoàng | 2h | 1.4h | 90,000 | 50,000 | 63,000 | S1-BAO-010 | S1 | Cần đối chiếu | Test route được bảo vệ |
| 47 | 1.2.4.15 | Viết RBAC guard mặc định từ chối: quản lý, lễ tân, nhân viên buồng phòng–bảo trì |  | 3h | 2026-09-21 10:00 A | 2026-09-21 14:00 | 46, 45, 40 | 50% | 1.5h | 2026-09-21 10:00 | 2026-09-21 14:00 | 3h | 2026-09-21 10:00 | 2026-09-21 14:00 | 0.38d |  | finish no earlier than 2026-09-21 14:00 | Hoàng | 3h | 1.5h | 135,000 | 75,000 | 67,500 | S1-BAO-011 | S1 | Cần đối chiếu | Test ma trận quyền |
| 48 | 1.2.4.16 | Viết API đọc phòng: danh sách, chi tiết, lọc tầng/trạng thái/loại, phân trang |  | 3h | 2026-09-21 14:00 A | 2026-09-21 17:00 A | 41, 47 | 100% |  | 2026-09-21 14:00 | 2026-09-21 17:00 | 3h | 2026-09-21 14:00 | 2026-09-21 17:00 |  |  | finish no earlier than 2026-09-21 17:00 | Hoàng | 3h | 3h | 135,000 | 75,000 | 135,000 | S1-BAO-012 | S1 | Cần đối chiếu | Test API và docs/api/rooms.md |
| 49 | 1.2.4.17 | Xuất OpenAPI tối thiểu cho auth và room catalog để import Postman hoặc Swagger |  | 2h | 2026-09-23 08:00 A | 2026-09-23 10:00 | 48, 51 | 40% | 1.2h | 2026-09-23 08:00 | 2026-09-23 10:00 | 2h | 2026-09-23 08:00 | 2026-09-23 10:00 | 0d |  | finish no earlier than 2026-09-23 10:00 | Hoàng | 2h | 0.8h | 90,000 | 50,000 | 36,000 | S1-BAO-020 | S1 | Cần đối chiếu | OpenAPI auth và rooms |
| 50 | 1.2.4.18 | Viết API ghi phòng: quản lý tạo, sửa, ngừng phục vụ; validate và conflict version |  | 4h | 2026-09-22 08:00 A | 2026-09-22 12:00 A | 48 | 100% |  | 2026-09-22 08:00 | 2026-09-22 12:00 | 4h | 2026-09-22 08:00 | 2026-09-22 12:00 |  |  | finish no earlier than 2026-09-22 12:00 | Hoàng | 4h | 4h | 180,000 | 100,000 | 180,000 | S1-BAO-013 | S1 | Cần đối chiếu | Test create, update, conflict |
| 51 | 1.2.4.19 | Dựng Socket.IO: xác thực kết nối và event cập nhật phòng kèm payload version |  | 4h | 2026-09-22 13:00 A | 2026-09-22 17:00 A | 46, 50 | 100% |  | 2026-09-22 13:00 | 2026-09-22 17:00 | 4h | 2026-09-22 13:00 | 2026-09-22 17:00 |  |  | finish no earlier than 2026-09-22 17:00 | Hoàng | 4h | 4h | 180,000 | 100,000 | 180,000 | S1-BAO-014 | S1 | Cần đối chiếu | Minh chứng hai client |
| 52 | 1.2.4.20 | Chốt quality gate backend Sprint 1: unit, integration, lint và báo cáo coverage |  | 4h | 2026-09-23 10:00 A | 2026-09-23 15:00 A | 48, 50, 51, 39, 45, 49, 35 | 100% |  | 2026-09-23 10:00 | 2026-09-23 15:00 | 4h | 2026-09-23 10:00 | 2026-09-23 15:00 |  |  | finish no earlier than 2026-09-23 15:00 | Hoàng | 4h | 4h | 180,000 | 100,000 | 180,000 | S1-BAO-015 | S1 | Cần đối chiếu | Log lệnh CI local |
| 53 | 1.2.5 | **Flutter Web, Android, Design Token và QA nền tảng** |  | 10.75d | 2026-09-15 14:00 A | 2026-09-28 11:00 |  | 95% | 0.51d | 2026-09-15 14:00 | 2026-09-28 11:00 | 10.75d | 2026-09-15 14:00 | 2026-09-28 11:00 | 0d |  |  |  | 42h | 40h | 1,680,000 | 1,260,000 | 1,600,000 |  |  |  |  |
| 54 | 1.2.5.1 | Bootstrap apps/mobile: Flutter, flavor/env, analyzer, build Web và APK debug |  | 3h | 2026-09-15 14:00 A | 2026-09-15 17:00 A | 33, 37SF | 100% |  | 2026-09-15 14:00 | 2026-09-15 17:00 | 3h | 2026-09-15 14:00 | 2026-09-15 17:00 |  |  | finish no earlier than 2026-09-15 15:00 | Bảo | 3h | 3h | 120,000 | 90,000 | 120,000 | S1-HOANG-001 | S1 | Cần đối chiếu | apps/mobile/pubspec.yaml và log build |
| 55 | 1.2.5.2 | Dựng app shell: auth guard, chặn route theo vai trò, màn loading, lỗi và not-found |  | 3h | 2026-09-16 08:00 A | 2026-09-16 11:00 A | 54 | 100% |  | 2026-09-16 08:00 | 2026-09-16 11:00 | 3h | 2026-09-16 08:00 | 2026-09-16 11:00 |  |  | finish no earlier than 2026-09-16 09:00 | Bảo | 3h | 3h | 120,000 | 90,000 | 120,000 | S1-HOANG-002 | S1 | Cần đối chiếu | Widget test shell |
| 56 | 1.2.5.3 | Hiện thực ThemeData từ Design Token: màu semantic, chữ, spacing, trạng thái |  | 4h | 2026-09-17 11:00 A | 2026-09-17 16:00 A | 54, 55, 35 | 100% |  | 2026-09-17 11:00 | 2026-09-17 16:00 | 4h | 2026-09-17 11:00 | 2026-09-17 16:00 |  |  | finish no earlier than 2026-09-17 11:00 | Bảo | 4h | 4h | 160,000 | 120,000 | 160,000 | S1-HOANG-003 | S1 | Cần đối chiếu | apps/mobile/lib/core/theme |
| 57 | 1.2.5.4 | Tạo component form dùng lại: text field, button, lỗi và loading theo token |  | 2h | 2026-09-23 11:00 A | 2026-09-23 14:00 A | 56, 66 | 100% |  | 2026-09-23 11:00 | 2026-09-23 14:00 | 2h | 2026-09-23 11:00 | 2026-09-23 14:00 |  |  | finish no earlier than 2026-09-23 14:00 | Bảo | 2h | 2h | 80,000 | 60,000 | 80,000 | S1-HOANG-012 | S1 | Cần đối chiếu | Form primitives |
| 58 | 1.2.5.5 | Tạo room status badge cho 3 trục lưu trú, vệ sinh và bảo trì |  | 1h | 2026-09-24 11:00 A | 2026-09-24 12:00 A | 56, 62 | 100% |  | 2026-09-24 11:00 | 2026-09-24 12:00 | 1h | 2026-09-24 11:00 | 2026-09-24 12:00 |  |  | finish no earlier than 2026-09-24 12:00 | Bảo | 1h | 1h | 40,000 | 30,000 | 40,000 | S1-HOANG-013 | S1 | Cần đối chiếu | Badge có semantic color và nhãn tiếng Việt |
| 59 | 1.2.5.6 | Viết API client: base URL, header auth, map lỗi có kiểu, timeout |  | 3h | 2026-09-18 11:00 A | 2026-09-18 15:00 A | 55, 44SF+1h, 56 | 100% |  | 2026-09-18 11:00 | 2026-09-18 15:00 | 3h | 2026-09-18 11:00 | 2026-09-18 15:00 |  |  | finish no earlier than 2026-09-18 14:00 | Bảo | 3h | 3h | 120,000 | 90,000 | 120,000 | S1-HOANG-004 | S1 | Cần đối chiếu | Unit test client |
| 60 | 1.2.5.7 | Làm màn đăng nhập: số điện thoại, mật khẩu, loading, sai thông tin, đăng xuất |  | 4h | 2026-09-23 14:00 A | 2026-09-24 09:00 A | 59, 57 | 100% |  | 2026-09-23 14:00 | 2026-09-24 09:00 | 4h | 2026-09-23 14:00 | 2026-09-24 09:00 |  |  | finish no earlier than 2026-09-24 09:00 | Bảo | 4h | 4h | 160,000 | 120,000 | 160,000 | S1-HOANG-005 | S1 | Cần đối chiếu | Widget test login |
| 61 | 1.2.5.8 | Viết widget test cho auth guard và validation form đăng nhập |  | 2h | 2026-09-28 08:00 A | 2026-09-28 10:00 A | 60, 67 | 100% |  | 2026-09-28 08:00 | 2026-09-28 10:00 | 2h | 2026-09-28 08:00 | 2026-09-28 10:00 |  |  | finish no earlier than 2026-09-28 10:00 | Bảo | 2h | 2h | 80,000 | 60,000 | 80,000 | S1-HOANG-014 | S1 | Cần đối chiếu | Test pass local |
| 62 | 1.2.5.9 | Lưu phiên an toàn, khôi phục khi mở lại app, xử lý token hết hạn và logout |  | 2h | 2026-09-24 09:00 A | 2026-09-24 11:00 A | 60, 44SF+2h | 100% |  | 2026-09-24 09:00 | 2026-09-24 11:00 | 2h | 2026-09-24 09:00 | 2026-09-24 11:00 |  |  | finish no earlier than 2026-09-24 11:00 | Bảo | 2h | 2h | 80,000 | 60,000 | 80,000 | S1-HOANG-006 | S1 | Cần đối chiếu | Test restart app |
| 63 | 1.2.5.10 | Làm danh sách danh mục phòng: tìm, lọc, phân trang, loading, rỗng và lỗi |  | 4h | 2026-09-24 13:00 A | 2026-09-24 17:00 A | 59, 48SF+2h, 58 | 100% |  | 2026-09-24 13:00 | 2026-09-24 17:00 | 4h | 2026-09-24 13:00 | 2026-09-24 17:00 |  |  | finish no earlier than 2026-09-24 17:00 | Bảo | 4h | 4h | 160,000 | 120,000 | 160,000 | S1-HOANG-007 | S1 | Cần đối chiếu | Widget test catalog |
| 64 | 1.2.5.11 | Làm form chi tiết phòng: quản lý tạo và sửa; vai trò khác không thấy nút ghi |  | 4h | 2026-09-25 08:00 A | 2026-09-25 12:00 A | 63, 50SF+2h | 100% |  | 2026-09-25 08:00 | 2026-09-25 12:00 | 4h | 2026-09-25 08:00 | 2026-09-25 12:00 |  |  | finish no earlier than 2026-09-25 12:00 | Bảo | 4h | 4h | 160,000 | 120,000 | 160,000 | S1-HOANG-008 | S1 | Cần đối chiếu | Test ẩn control theo role |
| 65 | 1.2.5.12 | Nối Socket.IO client: vòng đời kết nối, subscribe, cập nhật state phòng local |  | 3h | 2026-09-22 15:00 A | 2026-09-23 09:00 A | 59, 51SF+2h | 100% |  | 2026-09-22 15:00 | 2026-09-23 09:00 | 3h | 2026-09-22 15:00 | 2026-09-23 09:00 |  |  | finish no earlier than 2026-09-23 09:00 | Bảo | 3h | 3h | 120,000 | 90,000 | 120,000 | S1-HOANG-009 | S1 | Cần đối chiếu | Minh chứng hai trình duyệt hoặc hai client |
| 66 | 1.2.5.13 | Làm banner mất kết nối: khóa mọi nút ghi và refresh khi nối lại |  | 2h | 2026-09-23 09:00 A | 2026-09-23 11:00 A | 65 | 100% |  | 2026-09-23 09:00 | 2026-09-23 11:00 | 2h | 2026-09-23 09:00 | 2026-09-23 11:00 |  |  | finish no earlier than 2026-09-23 11:00 | Bảo | 2h | 2h | 80,000 | 60,000 | 80,000 | S1-HOANG-010 | S1 | Cần đối chiếu | Kịch bản offline thủ công |
| 67 | 1.2.5.14 | Chạy QA Sprint 1: 3 vai trò, RBAC, danh mục phòng, realtime hai client, responsive |  | 4h | 2026-09-25 13:00 A | 2026-09-25 17:00 | 60, 62, 63, 64, 65, 66, 52FF | 50% | 2h | 2026-09-25 13:00 | 2026-09-25 17:00 | 4h | 2026-09-25 13:00 | 2026-09-25 17:00 | 0d |  | finish no earlier than 2026-09-25 17:00 | Bảo | 4h | 2h | 160,000 | 120,000 | 80,000 | S1-HOANG-011 | S1 | Cần đối chiếu | docs/qa/sprint-1.md |
| 68 | 1.2.5.15 | Smoke test build Flutter Web và APK Android debug của Sprint 1 |  | 1h | 2026-09-28 10:00 A | 2026-09-28 11:00 A | 67, 61 | 100% |  | 2026-09-28 10:00 | 2026-09-28 11:00 | 1h | 2026-09-28 10:00 | 2026-09-28 11:00 |  |  | finish no earlier than 2026-09-28 11:00 | Bảo | 1h | 1h | 40,000 | 30,000 | 40,000 | S1-HOANG-015 | S1 | Cần đối chiếu | Artifact hoặc ảnh log build |
| 69 | 1.2.6 | Cổng Sprint 1: quản lý đăng nhập, sửa phòng, seed 50 phòng, RBAC chặn ghi, realtime hai client | milestone | 0d | 2026-09-28 11:00 A | 2026-09-28 11:00 A | 52, 68, 35 | 100% |  | 2026-09-28 11:00 | 2026-09-28 11:00 | 0d | 2026-09-28 11:00 | 2026-09-28 11:00 |  |  | finish no earlier than 2026-09-28 11:00 | Bảo |  |  |  |  |  | S1-GATE | S1 | Kế hoạch | Biên bản cổng Sprint 1 |

Notes:
- 31: Mã: S1-DAT-006 / Trạng thái: Đã xong / Đầu ra: Design Token guideline / Bằng chứng: Đạt xác nhận đã thiết kế. File docs/design-tokens.md chưa có trong repository; việc publish nằm ở S1-DAT-013 / Quan hệ gồm FS, SS, FF và SF. Việc ghi dữ liệu đi qua API, kiểm quyền, ghi audit, rồi mới phát Socket.IO.
- 33: Mã: S1-DAT-007 / Trạng thái: Cần đối chiếu / Đầu ra: docs/architecture.md và cây thư mục / Bằng chứng: chưa có trong repository tại 24/09/2026 / Quan hệ gồm FS, SS, FF và SF. Việc ghi dữ liệu đi qua API, kiểm quyền, ghi audit, rồi mới phát Socket.IO.
- 34: Mã: S1-DAT-014 / Trạng thái: Cần đối chiếu / Đầu ra: ADR có rationale và owner / Bằng chứng: chưa có trong repository tại 24/09/2026 / Quan hệ gồm FS, SS, FF và SF. Việc ghi dữ liệu đi qua API, kiểm quyền, ghi audit, rồi mới phát Socket.IO.
- 35: Mã: S1-DAT-012 / Trạng thái: Cần đối chiếu / Đầu ra: docs/runbooks/environment.md / Bằng chứng: chưa có trong repository tại 24/09/2026 / Quan hệ gồm FS, SS, FF và SF. Việc ghi dữ liệu đi qua API, kiểm quyền, ghi audit, rồi mới phát Socket.IO.
- 37: Mã: S1-BAO-001 / Trạng thái: Cần đối chiếu / Đầu ra: apps/api/package.json và src/main.ts, build pass / Bằng chứng: chưa có trong repository tại 24/09/2026 / Quan hệ gồm FS, SS, FF và SF. Việc ghi dữ liệu đi qua API, kiểm quyền, ghi audit, rồi mới phát Socket.IO.
- 38: Mã: S1-BAO-003 / Trạng thái: Cần đối chiếu / Đầu ra: Test health/ready / Bằng chứng: chưa có trong repository tại 24/09/2026 / Quan hệ gồm FS, SS, FF và SF. Việc ghi dữ liệu đi qua API, kiểm quyền, ghi audit, rồi mới phát Socket.IO.
- 39: Mã: S1-BAO-018 / Trạng thái: Cần đối chiếu / Đầu ra: Test DB độc lập, rollback pass / Bằng chứng: chưa có trong repository tại 24/09/2026 / Quan hệ gồm FS, SS, FF và SF. Việc ghi dữ liệu đi qua API, kiểm quyền, ghi audit, rồi mới phát Socket.IO.
- 40: Mã: S1-BAO-005 / Trạng thái: Cần đối chiếu / Đầu ra: Migration user/role / Bằng chứng: chưa có trong repository tại 24/09/2026 / Quan hệ gồm FS, SS, FF và SF. Việc ghi dữ liệu đi qua API, kiểm quyền, ghi audit, rồi mới phát Socket.IO.
- 41: Mã: S1-BAO-006 / Trạng thái: Cần đối chiếu / Đầu ra: Migration room và test constraint / Bằng chứng: chưa có trong repository tại 24/09/2026 / Quan hệ gồm FS, SS, FF và SF. Việc ghi dữ liệu đi qua API, kiểm quyền, ghi audit, rồi mới phát Socket.IO.
- 42: Mã: S1-BAO-007 / Trạng thái: Cần đối chiếu / Đầu ra: prisma/seed.ts / Bằng chứng: chưa có trong repository tại 24/09/2026 / Quan hệ gồm FS, SS, FF và SF. Việc ghi dữ liệu đi qua API, kiểm quyền, ghi audit, rồi mới phát Socket.IO.
- 43: Mã: S1-BAO-008 / Trạng thái: Cần đối chiếu / Đầu ra: Unit test password / Bằng chứng: chưa có trong repository tại 24/09/2026 / Quan hệ gồm FS, SS, FF và SF. Việc ghi dữ liệu đi qua API, kiểm quyền, ghi audit, rồi mới phát Socket.IO.
- 44: Mã: S1-BAO-009 / Trạng thái: Cần đối chiếu / Đầu ra: Test login / Bằng chứng: chưa có trong repository tại 24/09/2026 / Quan hệ gồm FS, SS, FF và SF. Việc ghi dữ liệu đi qua API, kiểm quyền, ghi audit, rồi mới phát Socket.IO.
- 45: Mã: S1-BAO-019 / Trạng thái: Cần đối chiếu / Đầu ra: Test chặn brute-force / Bằng chứng: chưa có trong repository tại 24/09/2026 / Quan hệ gồm FS, SS, FF và SF. Việc ghi dữ liệu đi qua API, kiểm quyền, ghi audit, rồi mới phát Socket.IO.
- 46: Mã: S1-BAO-010 / Trạng thái: Cần đối chiếu / Đầu ra: Test route được bảo vệ / Bằng chứng: chưa có trong repository tại 24/09/2026 / Quan hệ gồm FS, SS, FF và SF. Việc ghi dữ liệu đi qua API, kiểm quyền, ghi audit, rồi mới phát Socket.IO.
- 47: Mã: S1-BAO-011 / Trạng thái: Cần đối chiếu / Đầu ra: Test ma trận quyền / Bằng chứng: chưa có trong repository tại 24/09/2026 / Quan hệ gồm FS, SS, FF và SF. Việc ghi dữ liệu đi qua API, kiểm quyền, ghi audit, rồi mới phát Socket.IO.
- 48: Mã: S1-BAO-012 / Trạng thái: Cần đối chiếu / Đầu ra: Test API và docs/api/rooms.md / Bằng chứng: chưa có trong repository tại 24/09/2026 / Quan hệ gồm FS, SS, FF và SF. Việc ghi dữ liệu đi qua API, kiểm quyền, ghi audit, rồi mới phát Socket.IO.
- 49: Mã: S1-BAO-020 / Trạng thái: Cần đối chiếu / Đầu ra: OpenAPI auth và rooms / Bằng chứng: chưa có trong repository tại 24/09/2026 / Quan hệ gồm FS, SS, FF và SF. Việc ghi dữ liệu đi qua API, kiểm quyền, ghi audit, rồi mới phát Socket.IO.
- 50: Mã: S1-BAO-013 / Trạng thái: Cần đối chiếu / Đầu ra: Test create, update, conflict / Bằng chứng: chưa có trong repository tại 24/09/2026 / Quan hệ gồm FS, SS, FF và SF. Việc ghi dữ liệu đi qua API, kiểm quyền, ghi audit, rồi mới phát Socket.IO.
- 51: Mã: S1-BAO-014 / Trạng thái: Cần đối chiếu / Đầu ra: Minh chứng hai client / Bằng chứng: chưa có trong repository tại 24/09/2026 / Quan hệ gồm FS, SS, FF và SF. Việc ghi dữ liệu đi qua API, kiểm quyền, ghi audit, rồi mới phát Socket.IO.
- 52: Mã: S1-BAO-015 / Trạng thái: Cần đối chiếu / Đầu ra: Log lệnh CI local / Bằng chứng: chưa có trong repository tại 24/09/2026 / Quan hệ gồm FS, SS, FF và SF. Việc ghi dữ liệu đi qua API, kiểm quyền, ghi audit, rồi mới phát Socket.IO.
- 54: Mã: S1-HOANG-001 / Trạng thái: Cần đối chiếu / Đầu ra: apps/mobile/pubspec.yaml và log build / Bằng chứng: chưa có trong repository tại 24/09/2026 / Quan hệ gồm FS, SS, FF và SF. Việc ghi dữ liệu đi qua API, kiểm quyền, ghi audit, rồi mới phát Socket.IO.
- 55: Mã: S1-HOANG-002 / Trạng thái: Cần đối chiếu / Đầu ra: Widget test shell / Bằng chứng: chưa có trong repository tại 24/09/2026 / Quan hệ gồm FS, SS, FF và SF. Việc ghi dữ liệu đi qua API, kiểm quyền, ghi audit, rồi mới phát Socket.IO.
- 56: Mã: S1-HOANG-003 / Trạng thái: Cần đối chiếu / Đầu ra: apps/mobile/lib/core/theme / Bằng chứng: chưa có trong repository tại 24/09/2026 / Quan hệ gồm FS, SS, FF và SF. Việc ghi dữ liệu đi qua API, kiểm quyền, ghi audit, rồi mới phát Socket.IO.
- 57: Mã: S1-HOANG-012 / Trạng thái: Cần đối chiếu / Đầu ra: Form primitives / Bằng chứng: chưa có trong repository tại 24/09/2026 / Quan hệ gồm FS, SS, FF và SF. Việc ghi dữ liệu đi qua API, kiểm quyền, ghi audit, rồi mới phát Socket.IO.
- 58: Mã: S1-HOANG-013 / Trạng thái: Cần đối chiếu / Đầu ra: Badge có semantic color và nhãn tiếng Việt / Bằng chứng: chưa có trong repository tại 24/09/2026 / Quan hệ gồm FS, SS, FF và SF. Việc ghi dữ liệu đi qua API, kiểm quyền, ghi audit, rồi mới phát Socket.IO.
- 59: Mã: S1-HOANG-004 / Trạng thái: Cần đối chiếu / Đầu ra: Unit test client / Bằng chứng: chưa có trong repository tại 24/09/2026 / Quan hệ gồm FS, SS, FF và SF. Việc ghi dữ liệu đi qua API, kiểm quyền, ghi audit, rồi mới phát Socket.IO.
- 60: Mã: S1-HOANG-005 / Trạng thái: Cần đối chiếu / Đầu ra: Widget test login / Bằng chứng: chưa có trong repository tại 24/09/2026 / Quan hệ gồm FS, SS, FF và SF. Việc ghi dữ liệu đi qua API, kiểm quyền, ghi audit, rồi mới phát Socket.IO.
- 61: Mã: S1-HOANG-014 / Trạng thái: Cần đối chiếu / Đầu ra: Test pass local / Bằng chứng: chưa có trong repository tại 24/09/2026 / Quan hệ gồm FS, SS, FF và SF. Việc ghi dữ liệu đi qua API, kiểm quyền, ghi audit, rồi mới phát Socket.IO.
- 62: Mã: S1-HOANG-006 / Trạng thái: Cần đối chiếu / Đầu ra: Test restart app / Bằng chứng: chưa có trong repository tại 24/09/2026 / Quan hệ gồm FS, SS, FF và SF. Việc ghi dữ liệu đi qua API, kiểm quyền, ghi audit, rồi mới phát Socket.IO.
- 63: Mã: S1-HOANG-007 / Trạng thái: Cần đối chiếu / Đầu ra: Widget test catalog / Bằng chứng: chưa có trong repository tại 24/09/2026 / Quan hệ gồm FS, SS, FF và SF. Việc ghi dữ liệu đi qua API, kiểm quyền, ghi audit, rồi mới phát Socket.IO.
- 64: Mã: S1-HOANG-008 / Trạng thái: Cần đối chiếu / Đầu ra: Test ẩn control theo role / Bằng chứng: chưa có trong repository tại 24/09/2026 / Quan hệ gồm FS, SS, FF và SF. Việc ghi dữ liệu đi qua API, kiểm quyền, ghi audit, rồi mới phát Socket.IO.
- 65: Mã: S1-HOANG-009 / Trạng thái: Cần đối chiếu / Đầu ra: Minh chứng hai trình duyệt hoặc hai client / Bằng chứng: chưa có trong repository tại 24/09/2026 / Quan hệ gồm FS, SS, FF và SF. Việc ghi dữ liệu đi qua API, kiểm quyền, ghi audit, rồi mới phát Socket.IO.
- 66: Mã: S1-HOANG-010 / Trạng thái: Cần đối chiếu / Đầu ra: Kịch bản offline thủ công / Bằng chứng: chưa có trong repository tại 24/09/2026 / Quan hệ gồm FS, SS, FF và SF. Việc ghi dữ liệu đi qua API, kiểm quyền, ghi audit, rồi mới phát Socket.IO.
- 67: Mã: S1-HOANG-011 / Trạng thái: Cần đối chiếu / Đầu ra: docs/qa/sprint-1.md / Bằng chứng: chưa có trong repository tại 24/09/2026 / Quan hệ gồm FS, SS, FF và SF. Việc ghi dữ liệu đi qua API, kiểm quyền, ghi audit, rồi mới phát Socket.IO.
- 68: Mã: S1-HOANG-015 / Trạng thái: Cần đối chiếu / Đầu ra: Artifact hoặc ảnh log build / Bằng chứng: chưa có trong repository tại 24/09/2026 / Quan hệ gồm FS, SS, FF và SF. Việc ghi dữ liệu đi qua API, kiểm quyền, ghi audit, rồi mới phát Socket.IO.
- 69: Mã: S1-GATE / Trạng thái: Kế hoạch / Đầu ra: Biên bản cổng Sprint 1 / Bằng chứng: chưa có trong repository tại 24/09/2026 / Quan hệ gồm FS, SS, FF và SF. Việc ghi dữ liệu đi qua API, kiểm quyền, ghi audit, rồi mới phát Socket.IO.

| ID | WBS | Task | Duration | Start | Finish | Predecessors | Complete | Remaining | Baseline start | Baseline finish | Baseline duration | Baseline 1 start | Baseline 1 finish | Total slack | Free slack | Constraint | Deadline | Resources | Work | Actual work | Cost | Baseline cost | Actual cost | Text1 | Text2 | Text3 | Text4 |
| --- | --- | --- | --- | --- | --- | --- | --- | --- | --- | --- | --- | --- | --- | --- | --- | --- | --- | --- | --- | --- | --- | --- | --- | --- | --- | --- | --- |
| 70 | 1.3 | **Sprint 2 — Vận hành nhận trả, dọn phòng, bảo trì, audit (22/09–05/10/2026)** | 19.25d | 2026-09-17 15:00 A | 2026-10-09 17:00 |  | 76% | 4.58d | 2026-09-17 15:00 | 2026-10-09 17:00 | 19.25d | 2026-09-17 15:00 | 2026-10-09 17:00 | -2.25d | 0d |  | 2026-10-05 17:00 |  | 177h | 134.9h | 7,720,000 | 3,920,000 | 6,014,000 |  |  |  |  |
| 71 | 1.3.1 | **Chốt rule vận hành trước khi code check-in, housekeeping, maintenance** | 2.5d | 2026-09-17 15:00 A | 2026-09-21 10:00 |  | 96% | 0.11d | 2026-09-17 15:00 | 2026-09-21 10:00 | 2.5d | 2026-09-17 15:00 | 2026-09-21 10:00 | 12.75d |  |  |  |  | 16h | 15.3h | 800,000 | 480,000 | 765,000 |  |  |  |  |
| 72 | 1.3.1.1 | Chốt dữ liệu khách tối thiểu lúc nhận phòng: tên, số người, có lưu giấy tờ giả lập hay không | 1h | 2026-09-17 15:00 A | 2026-09-17 16:00 | 22, 40 | 30% | 0.7h | 2026-09-17 15:00 | 2026-09-17 16:00 | 1h | 2026-09-17 15:00 | 2026-09-17 16:00 | 15.12d |  | finish no earlier than 2026-09-17 11:00 |  | Đạt | 1h | 0.3h | 50,000 | 30,000 | 15,000 | S2-DAT-001 | S2 | Kế hoạch | SRS check-in canonical |
| 73 | 1.3.1.2 | Chốt ngưỡng quá hạn dọn phòng và bảo trì, cùng tần suất quét cảnh báo | 1h | 2026-09-17 16:00 A | 2026-09-17 17:00 A | 22, 72 | 100% |  | 2026-09-17 16:00 | 2026-09-17 17:00 | 1h | 2026-09-17 16:00 | 2026-09-17 17:00 |  |  | finish no earlier than 2026-09-17 12:00 |  | Đạt | 1h | 1h | 50,000 | 30,000 | 50,000 | S2-DAT-002 | S2 | Kế hoạch | SRS overdue và acceptance test |
| 74 | 1.3.1.3 | Chốt danh sách nhân viên trực và luật tie-break khi tự gán việc dọn hoặc sửa | 1h | 2026-09-18 08:00 A | 2026-09-18 09:00 A | 22, 73 | 100% |  | 2026-09-18 08:00 | 2026-09-18 09:00 | 1h | 2026-09-18 08:00 | 2026-09-18 09:00 |  |  | finish no earlier than 2026-09-17 14:00 |  | Đạt | 1h | 1h | 50,000 | 30,000 | 50,000 | S2-DAT-003 | S2 | Kế hoạch | SRS auto-assign |
| 75 | 1.3.1.4 | Chốt ngưỡng reconnect, cách hiện conflict version và phạm vi refresh trên client | 1h | 2026-09-18 09:00 A | 2026-09-18 10:00 A | 22, 74 | 100% |  | 2026-09-18 09:00 | 2026-09-18 10:00 | 1h | 2026-09-18 09:00 | 2026-09-18 10:00 |  |  | finish no earlier than 2026-09-17 15:00 |  | Đạt | 1h | 1h | 50,000 | 30,000 | 50,000 | S2-DAT-004 | S2 | Kế hoạch | SRS realtime |
| 76 | 1.3.1.5 | Xác nhận vai trò nào được tạo báo hỏng và ghi vào ma trận quyền | 1h | 2026-09-20 11:00 A | 2026-09-20 12:00 A | 74, 80 | 100% |  | 2026-09-20 11:00 | 2026-09-20 12:00 | 1h | 2026-09-20 11:00 | 2026-09-20 12:00 |  |  | finish no earlier than 2026-09-18 17:00 |  | Đạt | 1h | 1h | 50,000 | 30,000 | 50,000 | S2-DAT-008 | S2 | Kế hoạch | Permission matrix khớp SRS |
| 77 | 1.3.1.6 | Review state machine gộp lưu trú, vệ sinh, bảo trì và ranh giới transaction | 3h | 2026-09-18 10:00 A | 2026-09-18 14:00 A | 22, 72, 73, 74, 75 | 100% |  | 2026-09-18 10:00 | 2026-09-18 14:00 | 3h | 2026-09-18 10:00 | 2026-09-18 14:00 |  |  | finish no earlier than 2026-09-18 09:00 |  | Đạt | 3h | 3h | 150,000 | 90,000 | 150,000 | S2-DAT-005 | S2 | Kế hoạch | Ma trận chuyển trạng thái đã ký |
| 78 | 1.3.1.7 | Viết kịch bản nghiệm thu E2E 01 đến 10 cho nhận, trả, dọn, bảo trì | 3h | 2026-09-18 14:00 A | 2026-09-18 17:00 A | 77 | 100% |  | 2026-09-18 14:00 | 2026-09-18 17:00 | 3h | 2026-09-18 14:00 | 2026-09-18 17:00 |  |  | finish no earlier than 2026-09-18 12:00 |  | Đạt | 3h | 3h | 150,000 | 90,000 | 150,000 | S2-DAT-006 | S2 | Kế hoạch | docs/qa/e2e-sprint-2.md |
| 79 | 1.3.1.8 | Viết acceptance: phòng ngừng phục vụ thì lễ tân không check-in được, có câu lỗi kỳ vọng | 1h | 2026-09-21 08:00 A | 2026-09-21 09:00 A | 78, 76 | 100% |  | 2026-09-21 08:00 | 2026-09-21 09:00 | 1h | 2026-09-21 08:00 | 2026-09-21 09:00 |  |  | finish no earlier than 2026-09-21 09:00 |  | Đạt | 1h | 1h | 50,000 | 30,000 | 50,000 | S2-DAT-009 | S2 | Kế hoạch | Kịch bản phòng OOS |
| 80 | 1.3.1.9 | Review contract API và event Socket.IO của luồng vận hành | 3h | 2026-09-20 08:00 A | 2026-09-20 11:00 A | 77, 78 | 100% |  | 2026-09-20 08:00 | 2026-09-20 11:00 | 3h | 2026-09-20 08:00 | 2026-09-20 11:00 |  |  | finish no earlier than 2026-09-18 16:00 |  | Đạt | 3h | 3h | 150,000 | 90,000 | 150,000 | S2-DAT-007 | S2 | Kế hoạch | docs/api/operations.md |
| 81 | 1.3.1.10 | Duyệt catalogue thông điệp lỗi tiếng Việt cho check-in, check-out, dọn và bảo trì | 1h | 2026-09-21 09:00 A | 2026-09-21 10:00 A | 80, 79 | 100% |  | 2026-09-21 09:00 | 2026-09-21 10:00 | 1h | 2026-09-21 09:00 | 2026-09-21 10:00 |  |  | finish no earlier than 2026-09-21 10:00 |  | Đạt | 1h | 1h | 50,000 | 30,000 | 50,000 | S2-DAT-010 | S2 | Kế hoạch | Error catalogue có UI copy |
| 82 | 1.3.2 | **Check-in, check-out, housekeeping, maintenance, audit log và Socket.IO** | 10d | 2026-09-23 15:00 A | 2026-10-05 15:00 |  | 97% | 0.31d | 2026-09-23 15:00 | 2026-10-05 15:00 | 10d | 2026-09-23 15:00 | 2026-10-05 15:00 | 0.25d |  |  |  |  | 96h | 93h | 4,320,000 | 2,000,000 | 4,185,000 |  |  |  |  |
| 83 | 1.3.2.1 | Migration Stay và snapshot khách tối thiểu theo rule đã chốt | 3h | 2026-09-23 15:00 A | 2026-09-24 09:00 A | 72, 77, 52 | 100% |  | 2026-09-23 15:00 | 2026-09-24 09:00 | 3h | 2026-09-23 15:00 | 2026-09-24 09:00 |  |  | finish no earlier than 2026-09-24 09:00 |  | Hoàng | 3h | 3h | 135,000 | 75,000 | 135,000 | S2-BAO-001 | S2 | Kế hoạch | Migration Stay và test rollback |
| 84 | 1.3.2.2 | Migration HousekeepingTask: trạng thái, người được gán, dueAt, version, quan hệ phòng | 3h | 2026-09-24 09:00 A | 2026-09-24 12:00 A | 73, 74, 77, 83 | 100% |  | 2026-09-24 09:00 | 2026-09-24 12:00 | 3h | 2026-09-24 09:00 | 2026-09-24 12:00 |  |  | finish no earlier than 2026-09-24 12:00 |  | Hoàng | 3h | 3h | 135,000 | 75,000 | 135,000 | S2-BAO-002 | S2 | Kế hoạch | Migration housekeeping |
| 85 | 1.3.2.3 | Migration MaintenanceTask: trạng thái, người báo, người nhận, dueAt, mô tả hỏng | 3h | 2026-09-24 13:00 A | 2026-09-24 16:00 A | 73, 77, 84 | 100% |  | 2026-09-24 13:00 | 2026-09-24 16:00 | 3h | 2026-09-24 13:00 | 2026-09-24 16:00 |  |  | finish no earlier than 2026-09-24 16:00 |  | Hoàng | 3h | 3h | 135,000 | 75,000 | 135,000 | S2-BAO-003 | S2 | Kế hoạch | Migration maintenance |
| 86 | 1.3.2.4 | Migration AuditLog và index: actor, action, entity, before, after, timestamp | 3h | 2026-09-24 16:00 A | 2026-09-25 10:00 A | 47, 77, 85 | 100% |  | 2026-09-24 16:00 | 2026-09-25 10:00 | 3h | 2026-09-24 16:00 | 2026-09-25 10:00 |  |  | finish no earlier than 2026-09-25 10:00 |  | Hoàng | 3h | 3h | 135,000 | 75,000 | 135,000 | S2-BAO-004 | S2 | Kế hoạch | Migration audit log |
| 87 | 1.3.2.5 | Viết service đủ điều kiện check-in: một nguồn sự thật và mã lý do từ chối | 3h | 2026-09-25 10:00 A | 2026-09-25 14:00 A | 83, 86 | 100% |  | 2026-09-25 10:00 | 2026-09-25 14:00 | 3h | 2026-09-25 10:00 | 2026-09-25 14:00 |  |  | finish no earlier than 2026-09-25 14:00 |  | Hoàng | 3h | 3h | 135,000 | 75,000 | 135,000 | S2-BAO-005 | S2 | Kế hoạch | Test reason code |
| 88 | 1.3.2.6 | Viết API check-in trong một transaction: tạo stay, đổi trạng thái, audit, rồi mới emit | 12h | 2026-09-25 14:00 A | 2026-09-28 09:00 A | 87 | 100% |  | 2026-09-25 14:00 | 2026-09-28 09:00 | 12h | 2026-09-25 14:00 | 2026-09-28 09:00 |  |  | finish no earlier than 2026-09-28 09:00 |  | Hoàng | 12h | 12h | 540,000 | 300,000 | 540,000 | S2-BAO-006 | S2 | Kế hoạch | Test check-in |
| 89 | 1.3.2.7 | Viết API check-out: đóng stay, đánh dấu phòng cần dọn, tạo việc housekeeping | 4h | 2026-09-28 09:00 A | 2026-09-28 14:00 A | 88, 84 | 100% |  | 2026-09-28 09:00 | 2026-09-28 14:00 | 4h | 2026-09-28 09:00 | 2026-09-28 14:00 |  |  | finish no earlier than 2026-09-28 14:00 |  | Hoàng | 4h | 4h | 180,000 | 100,000 | 180,000 | S2-BAO-007 | S2 | Kế hoạch | Test check-out atomic |
| 90 | 1.3.2.8 | Thêm idempotency cho check-out để gửi lại không tạo thêm việc dọn thứ hai | 2h | 2026-09-30 09:00 A | 2026-09-30 11:00 A | 89, 96 | 100% |  | 2026-09-30 09:00 | 2026-09-30 11:00 | 2h | 2026-09-30 09:00 | 2026-09-30 11:00 |  |  | finish no earlier than 2026-09-30 11:00 |  | Hoàng | 2h | 2h | 90,000 | 50,000 | 90,000 | S2-BAO-015 | S2 | Kế hoạch | Test request lặp |
| 91 | 1.3.2.9 | Viết auto-assign: người đang trực, ít việc mở nhất, tie-break xác định | 3h | 2026-09-28 14:00 A | 2026-09-28 17:00 A | 84, 85, 89 | 100% |  | 2026-09-28 14:00 | 2026-09-28 17:00 | 3h | 2026-09-28 14:00 | 2026-09-28 17:00 |  |  | finish no earlier than 2026-09-28 17:00 |  | Hoàng | 3h | 3h | 135,000 | 75,000 | 135,000 | S2-BAO-008 | S2 | Kế hoạch | Unit test gán việc |
| 92 | 1.3.2.10 | Viết lệnh housekeeping: nhận, từ chối, bắt đầu, hoàn tất, quản lý xác nhận | 5h | 2026-09-29 08:00 A | 2026-09-29 14:00 A | 91, 89 | 100% |  | 2026-09-29 08:00 | 2026-09-29 14:00 | 5h | 2026-09-29 08:00 | 2026-09-29 14:00 |  |  | finish no earlier than 2026-09-29 14:00 |  | Hoàng | 5h | 5h | 225,000 | 125,000 | 225,000 | S2-BAO-009 | S2 | Kế hoạch | Test chuyển trạng thái dọn phòng |
| 93 | 1.3.2.11 | Viết API danh sách việc theo assignee và trạng thái, có phân trang, lọc và sort | 2h | 2026-10-02 10:00 A | 2026-10-02 12:00 A | 92, 95, 99 | 100% |  | 2026-10-02 10:00 | 2026-10-02 12:00 | 2h | 2026-10-02 10:00 | 2026-10-02 12:00 |  |  | finish no earlier than 2026-10-02 12:00 |  | Hoàng | 2h | 2h | 90,000 | 50,000 | 90,000 | S2-BAO-018 | S2 | Kế hoạch | Test list task |
| 94 | 1.3.2.12 | Viết lệnh báo hỏng: tạo maintenance task, chuyển phòng ngừng phục vụ, audit và emit | 4h | 2026-09-30 14:00 A | 2026-10-01 09:00 A | 85, 76, 97 | 100% |  | 2026-09-30 14:00 | 2026-10-01 09:00 | 4h | 2026-09-30 14:00 | 2026-10-01 09:00 |  |  | finish no earlier than 2026-10-01 09:00 |  | Hoàng | 4h | 4h | 180,000 | 100,000 | 180,000 | S2-BAO-010 | S2 | Kế hoạch | Test báo hỏng |
| 95 | 1.3.2.13 | Viết lệnh bảo trì: nhận việc, bắt đầu, hoàn tất, mở lại, mỗi lệnh có guard | 4h | 2026-10-01 09:00 A | 2026-10-01 14:00 A | 94 | 100% |  | 2026-10-01 09:00 | 2026-10-01 14:00 | 4h | 2026-10-01 09:00 | 2026-10-01 14:00 |  |  | finish no earlier than 2026-10-01 14:00 |  | Hoàng | 4h | 4h | 180,000 | 100,000 | 180,000 | S2-BAO-011 | S2 | Kế hoạch | Test claim, complete, reopen |
| 96 | 1.3.2.14 | Viết audit service trong transaction và API đọc nhật ký | 24h | 2026-09-30 08:00 A | 2026-10-02 17:00 A | 86, 92 | 100% |  | 2026-09-29 14:00 | 2026-09-30 09:00 | 4h | 2026-09-29 14:00 | 2026-09-30 09:00 |  |  | finish no earlier than 2026-09-30 09:00 |  | Hoàng | 24h | 24h | 1,080,000 | 100,000 | 1,080,000 | S2-BAO-012 | S2 | Kế hoạch | Test ghi và đọc audit |
| 97 | 1.3.2.15 | Serializer before/after của audit không ghi password, token hoặc PII không cần | 2h | 2026-09-30 11:00 A | 2026-09-30 14:00 A | 96, 90 | 100% |  | 2026-09-30 11:00 | 2026-09-30 14:00 | 2h | 2026-09-30 11:00 | 2026-09-30 14:00 |  |  | finish no earlier than 2026-09-30 14:00 |  | Hoàng | 2h | 2h | 90,000 | 50,000 | 90,000 | S2-BAO-017 | S2 | Kế hoạch | Test redact |
| 98 | 1.3.2.16 | Phát Socket.IO chỉ sau commit; payload conflict khi version phòng hoặc task cũ | 3h | 2026-10-01 14:00 A | 2026-10-01 17:00 | 88, 89, 92, 95, 96, 75 | 40% | 1.8h | 2026-10-01 14:00 | 2026-10-01 17:00 | 3h | 2026-10-01 14:00 | 2026-10-01 17:00 | 3d | 0.88d | finish no earlier than 2026-10-01 17:00 |  | Hoàng | 3h | 1.2h | 135,000 | 75,000 | 54,000 | S2-BAO-013 | S2 | Kế hoạch | Test emit sau commit |
| 99 | 1.3.2.17 | Test optimistic lock: version cũ của phòng và task trả conflict nhất quán | 2h | 2026-10-02 08:00 A | 2026-10-02 10:00 A | 98 | 100% |  | 2026-10-02 08:00 | 2026-10-02 10:00 | 2h | 2026-10-02 08:00 | 2026-10-02 10:00 |  |  | finish no earlier than 2026-10-02 10:00 |  | Hoàng | 2h | 2h | 90,000 | 50,000 | 90,000 | S2-BAO-016 | S2 | Kế hoạch | Test conflict |
| 100 | 1.3.2.18 | Bộ test vận hành: RBAC, idempotency, rollback, check-in đồng thời, state machine | 1.5d | 2026-10-02 13:00 A | 2026-10-04 17:00 A | 98, 90, 99, 97, 93 | 100% |  | 2026-10-02 13:00 | 2026-10-05 12:00 | 2d | 2026-10-02 13:00 | 2026-10-05 12:00 |  |  | finish no earlier than 2026-10-05 12:00 |  | Hoàng | 12h | 12h | 540,000 | 400,000 | 540,000 | S2-BAO-014 | S2 | Kế hoạch | Báo cáo test Sprint 2 |
| 101 | 1.3.2.19 | Xuất OpenAPI cho check-in, check-out và các lệnh task | 2h | 2026-10-05 13:00 A | 2026-10-05 15:00 | 100 | 40% | 1.2h | 2026-10-05 13:00 | 2026-10-05 15:00 | 2h | 2026-10-05 13:00 | 2026-10-05 15:00 | 0.03d | 0d | finish no earlier than 2026-10-05 15:00 |  | Hoàng | 2h | 0.8h | 90,000 | 50,000 | 36,000 | S2-BAO-019 | S2 | Kế hoạch | OpenAPI operations |

Notes:
- 72: Mã: S2-DAT-001 / Trạng thái: Kế hoạch / Đầu ra: SRS check-in canonical / Bằng chứng: chưa có trong repository tại 24/09/2026 / Quan hệ gồm FS, SS, FF và SF. Việc ghi dữ liệu đi qua API, kiểm quyền, ghi audit, rồi mới phát Socket.IO.
- 73: Mã: S2-DAT-002 / Trạng thái: Kế hoạch / Đầu ra: SRS overdue và acceptance test / Bằng chứng: chưa có trong repository tại 24/09/2026 / Quan hệ gồm FS, SS, FF và SF. Việc ghi dữ liệu đi qua API, kiểm quyền, ghi audit, rồi mới phát Socket.IO.
- 74: Mã: S2-DAT-003 / Trạng thái: Kế hoạch / Đầu ra: SRS auto-assign / Bằng chứng: chưa có trong repository tại 24/09/2026 / Quan hệ gồm FS, SS, FF và SF. Việc ghi dữ liệu đi qua API, kiểm quyền, ghi audit, rồi mới phát Socket.IO.
- 75: Mã: S2-DAT-004 / Trạng thái: Kế hoạch / Đầu ra: SRS realtime / Bằng chứng: chưa có trong repository tại 24/09/2026 / Quan hệ gồm FS, SS, FF và SF. Việc ghi dữ liệu đi qua API, kiểm quyền, ghi audit, rồi mới phát Socket.IO.
- 76: Mã: S2-DAT-008 / Trạng thái: Kế hoạch / Đầu ra: Permission matrix khớp SRS / Bằng chứng: chưa có trong repository tại 24/09/2026 / Quan hệ gồm FS, SS, FF và SF. Việc ghi dữ liệu đi qua API, kiểm quyền, ghi audit, rồi mới phát Socket.IO.
- 77: Mã: S2-DAT-005 / Trạng thái: Kế hoạch / Đầu ra: Ma trận chuyển trạng thái đã ký / Bằng chứng: chưa có trong repository tại 24/09/2026 / Quan hệ gồm FS, SS, FF và SF. Việc ghi dữ liệu đi qua API, kiểm quyền, ghi audit, rồi mới phát Socket.IO.
- 78: Mã: S2-DAT-006 / Trạng thái: Kế hoạch / Đầu ra: docs/qa/e2e-sprint-2.md / Bằng chứng: chưa có trong repository tại 24/09/2026 / Quan hệ gồm FS, SS, FF và SF. Việc ghi dữ liệu đi qua API, kiểm quyền, ghi audit, rồi mới phát Socket.IO.
- 79: Mã: S2-DAT-009 / Trạng thái: Kế hoạch / Đầu ra: Kịch bản phòng OOS / Bằng chứng: chưa có trong repository tại 24/09/2026 / Quan hệ gồm FS, SS, FF và SF. Việc ghi dữ liệu đi qua API, kiểm quyền, ghi audit, rồi mới phát Socket.IO.
- 80: Mã: S2-DAT-007 / Trạng thái: Kế hoạch / Đầu ra: docs/api/operations.md / Bằng chứng: chưa có trong repository tại 24/09/2026 / Quan hệ gồm FS, SS, FF và SF. Việc ghi dữ liệu đi qua API, kiểm quyền, ghi audit, rồi mới phát Socket.IO.
- 81: Mã: S2-DAT-010 / Trạng thái: Kế hoạch / Đầu ra: Error catalogue có UI copy / Bằng chứng: chưa có trong repository tại 24/09/2026 / Quan hệ gồm FS, SS, FF và SF. Việc ghi dữ liệu đi qua API, kiểm quyền, ghi audit, rồi mới phát Socket.IO.
- 83: Mã: S2-BAO-001 / Trạng thái: Kế hoạch / Đầu ra: Migration Stay và test rollback / Bằng chứng: chưa có trong repository tại 24/09/2026 / Quan hệ gồm FS, SS, FF và SF. Việc ghi dữ liệu đi qua API, kiểm quyền, ghi audit, rồi mới phát Socket.IO.
- 84: Mã: S2-BAO-002 / Trạng thái: Kế hoạch / Đầu ra: Migration housekeeping / Bằng chứng: chưa có trong repository tại 24/09/2026 / Quan hệ gồm FS, SS, FF và SF. Việc ghi dữ liệu đi qua API, kiểm quyền, ghi audit, rồi mới phát Socket.IO.
- 85: Mã: S2-BAO-003 / Trạng thái: Kế hoạch / Đầu ra: Migration maintenance / Bằng chứng: chưa có trong repository tại 24/09/2026 / Quan hệ gồm FS, SS, FF và SF. Việc ghi dữ liệu đi qua API, kiểm quyền, ghi audit, rồi mới phát Socket.IO.
- 86: Mã: S2-BAO-004 / Trạng thái: Kế hoạch / Đầu ra: Migration audit log / Bằng chứng: chưa có trong repository tại 24/09/2026 / Quan hệ gồm FS, SS, FF và SF. Việc ghi dữ liệu đi qua API, kiểm quyền, ghi audit, rồi mới phát Socket.IO.
- 87: Mã: S2-BAO-005 / Trạng thái: Kế hoạch / Đầu ra: Test reason code / Bằng chứng: chưa có trong repository tại 24/09/2026 / Quan hệ gồm FS, SS, FF và SF. Việc ghi dữ liệu đi qua API, kiểm quyền, ghi audit, rồi mới phát Socket.IO.
- 88: Mã: S2-BAO-006 / Trạng thái: Kế hoạch / Đầu ra: Test check-in / Bằng chứng: chưa có trong repository tại 24/09/2026 / Quan hệ gồm FS, SS, FF và SF. Việc ghi dữ liệu đi qua API, kiểm quyền, ghi audit, rồi mới phát Socket.IO.
- 89: Mã: S2-BAO-007 / Trạng thái: Kế hoạch / Đầu ra: Test check-out atomic / Bằng chứng: chưa có trong repository tại 24/09/2026 / Quan hệ gồm FS, SS, FF và SF. Việc ghi dữ liệu đi qua API, kiểm quyền, ghi audit, rồi mới phát Socket.IO.
- 90: Mã: S2-BAO-015 / Trạng thái: Kế hoạch / Đầu ra: Test request lặp / Bằng chứng: chưa có trong repository tại 24/09/2026 / Quan hệ gồm FS, SS, FF và SF. Việc ghi dữ liệu đi qua API, kiểm quyền, ghi audit, rồi mới phát Socket.IO.
- 91: Mã: S2-BAO-008 / Trạng thái: Kế hoạch / Đầu ra: Unit test gán việc / Bằng chứng: chưa có trong repository tại 24/09/2026 / Quan hệ gồm FS, SS, FF và SF. Việc ghi dữ liệu đi qua API, kiểm quyền, ghi audit, rồi mới phát Socket.IO.
- 92: Mã: S2-BAO-009 / Trạng thái: Kế hoạch / Đầu ra: Test chuyển trạng thái dọn phòng / Bằng chứng: chưa có trong repository tại 24/09/2026 / Quan hệ gồm FS, SS, FF và SF. Việc ghi dữ liệu đi qua API, kiểm quyền, ghi audit, rồi mới phát Socket.IO.
- 93: Mã: S2-BAO-018 / Trạng thái: Kế hoạch / Đầu ra: Test list task / Bằng chứng: chưa có trong repository tại 24/09/2026 / Quan hệ gồm FS, SS, FF và SF. Việc ghi dữ liệu đi qua API, kiểm quyền, ghi audit, rồi mới phát Socket.IO.
- 94: Mã: S2-BAO-010 / Trạng thái: Kế hoạch / Đầu ra: Test báo hỏng / Bằng chứng: chưa có trong repository tại 24/09/2026 / Quan hệ gồm FS, SS, FF và SF. Việc ghi dữ liệu đi qua API, kiểm quyền, ghi audit, rồi mới phát Socket.IO.
- 95: Mã: S2-BAO-011 / Trạng thái: Kế hoạch / Đầu ra: Test claim, complete, reopen / Bằng chứng: chưa có trong repository tại 24/09/2026 / Quan hệ gồm FS, SS, FF và SF. Việc ghi dữ liệu đi qua API, kiểm quyền, ghi audit, rồi mới phát Socket.IO.
- 96: Mã: S2-BAO-012 / Trạng thái: Kế hoạch / Đầu ra: Test ghi và đọc audit / Bằng chứng: chưa có trong repository tại 24/09/2026 / Quan hệ gồm FS, SS, FF và SF. Việc ghi dữ liệu đi qua API, kiểm quyền, ghi audit, rồi mới phát Socket.IO.
- 97: Mã: S2-BAO-017 / Trạng thái: Kế hoạch / Đầu ra: Test redact / Bằng chứng: chưa có trong repository tại 24/09/2026 / Quan hệ gồm FS, SS, FF và SF. Việc ghi dữ liệu đi qua API, kiểm quyền, ghi audit, rồi mới phát Socket.IO.
- 98: Mã: S2-BAO-013 / Trạng thái: Kế hoạch / Đầu ra: Test emit sau commit / Bằng chứng: chưa có trong repository tại 24/09/2026 / Quan hệ gồm FS, SS, FF và SF. Việc ghi dữ liệu đi qua API, kiểm quyền, ghi audit, rồi mới phát Socket.IO.
- 99: Mã: S2-BAO-016 / Trạng thái: Kế hoạch / Đầu ra: Test conflict / Bằng chứng: chưa có trong repository tại 24/09/2026 / Quan hệ gồm FS, SS, FF và SF. Việc ghi dữ liệu đi qua API, kiểm quyền, ghi audit, rồi mới phát Socket.IO.
- 100: Mã: S2-BAO-014 / Trạng thái: Kế hoạch / Đầu ra: Báo cáo test Sprint 2 / Bằng chứng: chưa có trong repository tại 24/09/2026 / Quan hệ gồm FS, SS, FF và SF. Việc ghi dữ liệu đi qua API, kiểm quyền, ghi audit, rồi mới phát Socket.IO.
- 101: Mã: S2-BAO-019 / Trạng thái: Kế hoạch / Đầu ra: OpenAPI operations / Bằng chứng: chưa có trong repository tại 24/09/2026 / Quan hệ gồm FS, SS, FF và SF. Việc ghi dữ liệu đi qua API, kiểm quyền, ghi audit, rồi mới phát Socket.IO.

| ID | WBS | Task | Type | Duration | Start | Finish | Predecessors | Complete | Remaining | Baseline start | Baseline finish | Baseline duration | Baseline 1 start | Baseline 1 finish | Total slack | Free slack | Constraint | Deadline | Resources | Work | Actual work | Cost | Baseline cost | Actual cost | Text1 | Text2 | Text3 | Text4 |
| --- | --- | --- | --- | --- | --- | --- | --- | --- | --- | --- | --- | --- | --- | --- | --- | --- | --- | --- | --- | --- | --- | --- | --- | --- | --- | --- | --- | --- |
| 102 | 1.3.3 | **Flutter Web và Android cho nhận trả, dọn phòng, bảo trì, nhật ký** |  | 7.5d | 2026-09-30 16:00 A | 2026-10-09 11:00 |  | 41% | 4.43d | 2026-09-30 16:00 | 2026-10-08 17:00 | 7.12d | 2026-09-30 16:00 | 2026-10-08 17:00 | -1.62d | 0d |  |  |  | 65h | 26.6h | 2,600,000 | 1,440,000 | 1,064,000 |  |  |  |  |
| 103 | 1.3.3.1 | Tạo hộp thoại xác nhận lệnh dùng chung: confirm, cancel, loading, error |  | 16h | 2026-10-01 08:00 A | 2026-10-02 17:00 A | 57, 113 | 100% |  | 2026-10-02 15:00 | 2026-10-02 17:00 | 2h | 2026-10-02 15:00 | 2026-10-02 17:00 |  |  | finish no earlier than 2026-10-02 17:00 |  | Bảo | 16h | 16h | 640,000 | 60,000 | 640,000 | S2-HOANG-011 | S2 | Kế hoạch | Component confirmation |
| 104 | 1.3.3.2 | Màn check-in Web: chọn phòng sẵn sàng, form khách, hiện lý do không đủ điều kiện |  | 8h | 2026-10-05 08:00 A | 2026-10-05 17:00 A | 68, 88SF+2h, 103 | 100% |  | 2026-10-05 08:00 | 2026-10-05 14:00 | 5h | 2026-10-05 08:00 | 2026-10-05 14:00 |  |  | finish no earlier than 2026-10-05 14:00 |  | Bảo | 8h | 8h | 320,000 | 150,000 | 320,000 | S2-HOANG-001 | S2 | Kế hoạch | Màn check-in |
| 105 | 1.3.3.3 | Màn check-out Web: xác nhận trả phòng và báo đã tạo việc dọn |  | 4h | 2026-10-06 08:00 | 2026-10-06 12:00 | 104, 89SF+2h |  |  | 2026-10-05 14:00 | 2026-10-06 09:00 | 4h | 2026-10-05 14:00 | 2026-10-06 09:00 | -1.75d | 0d | finish no earlier than 2026-10-06 09:00 |  | Bảo | 4h |  | 160,000 | 120,000 |  | S2-HOANG-002 | S2 | Kế hoạch | Màn check-out |
| 106 | 1.3.3.4 | Tạo timeline trạng thái việc dùng chung cho dọn phòng và bảo trì |  | 2h | 2026-10-06 13:00 A | 2026-10-06 15:00 | 58, 105 | 20% | 1.6h | 2026-10-06 09:00 | 2026-10-06 11:00 | 2h | 2026-10-06 09:00 | 2026-10-06 11:00 | -0.38d | 0d | finish no earlier than 2026-10-06 11:00 |  | Bảo | 2h | 0.4h | 80,000 | 60,000 | 16,000 | S2-HOANG-012 | S2 | Kế hoạch | Component timeline |
| 107 | 1.3.3.5 | Màn Android việc dọn được gán: danh sách, hạn, ưu tiên, rỗng và loading |  | 4h | 2026-10-06 15:00 A | 2026-10-07 10:00 | 92SF+2h, 106 | 30% | 2.8h | 2026-10-06 11:00 | 2026-10-06 16:00 | 4h | 2026-10-06 11:00 | 2026-10-06 16:00 | -0.38d | 0d | finish no earlier than 2026-10-06 16:00 |  | Bảo | 4h | 1.2h | 160,000 | 120,000 | 48,000 | S2-HOANG-003 | S2 | Kế hoạch | Màn my cleaning tasks |
| 108 | 1.3.3.6 | Thao tác việc dọn trên Android: nhận, từ chối, hoàn tất, có xác nhận và lỗi |  | 4h | 2026-10-07 10:00 A | 2026-10-07 15:00 | 107 | 25% | 3h | 2026-10-06 16:00 | 2026-10-07 11:00 | 4h | 2026-10-06 16:00 | 2026-10-07 11:00 | -0.38d | 0d | finish no earlier than 2026-10-07 11:00 |  | Bảo | 4h | 1h | 160,000 | 120,000 | 40,000 | S2-HOANG-004 | S2 | Kế hoạch | UI action dọn phòng |
| 109 | 1.3.3.7 | Hàng chờ quản lý xác nhận phòng đã dọn trên Web: xác nhận hoặc trả lại |  | 3h | 2026-10-07 15:00 | 2026-10-08 09:00 | 108 |  |  | 2026-10-07 11:00 | 2026-10-07 15:00 | 3h | 2026-10-07 11:00 | 2026-10-07 15:00 | -3.38d | 0d | finish no earlier than 2026-10-07 17:00 |  | Bảo | 3h |  | 120,000 | 90,000 |  | S2-HOANG-005 | S2 | Kế hoạch | UI xác nhận dọn phòng |
| 110 | 1.3.3.8 | Màn báo hỏng: chọn phòng, validate mô tả, phản hồi sau khi gửi |  | 3h | 2026-09-30 16:00 | 2026-10-01 10:00 | 94SF+2h, 27 |  |  | 2026-09-30 16:00 | 2026-10-01 10:00 | 3h | 2026-09-30 16:00 | 2026-10-01 10:00 | 1.12d | 0.12d | finish no earlier than 2026-10-01 10:00 |  | Bảo | 3h |  | 120,000 | 90,000 |  | S2-HOANG-006 | S2 | Kế hoạch | UI báo hỏng |
| 111 | 1.3.3.9 | Màn Android việc bảo trì: nhận, bắt đầu, hoàn tất, mở lại |  | 4h | 2026-10-01 11:00 | 2026-10-01 16:00 | 110, 95SF+2h |  |  | 2026-10-01 11:00 | 2026-10-01 16:00 | 4h | 2026-10-01 11:00 | 2026-10-01 16:00 | 1d | 0d | finish no earlier than 2026-10-01 16:00 |  | Bảo | 4h |  | 160,000 | 120,000 |  | S2-HOANG-007 | S2 | Kế hoạch | UI maintenance task |
| 112 | 1.3.3.10 | Màn nhật ký Web: lọc, phân trang, xem theo phòng, before sang after |  | 4h | 2026-10-01 16:00 | 2026-10-02 11:00 | 96SF+2h, 111 |  |  | 2026-10-01 16:00 | 2026-10-02 11:00 | 4h | 2026-10-01 16:00 | 2026-10-02 11:00 | 1d | 0d | finish no earlier than 2026-10-02 11:00 |  | Bảo | 4h |  | 160,000 | 120,000 |  | S2-HOANG-008 | S2 | Kế hoạch | UI audit log |
| 113 | 1.3.3.11 | UX conflict và reconnect: cảnh báo dữ liệu cũ, refresh, retry không ghi trùng |  | 3h | 2026-10-02 11:00 | 2026-10-02 15:00 | 66, 98SF+2h, 112 |  |  | 2026-10-02 11:00 | 2026-10-02 15:00 | 3h | 2026-10-02 11:00 | 2026-10-02 15:00 | 1d |  | finish no earlier than 2026-10-02 15:00 |  | Bảo | 3h |  | 120,000 | 90,000 |  | S2-HOANG-009 | S2 | Kế hoạch | UI conflict |
| 114 | 1.3.3.12 | Kiểm thử Android khi mạng chập chờn: không gửi write trùng, có hướng dẫn retry |  | 2h | 2026-10-08 16:00 | 2026-10-09 09:00 | 113, 115 |  |  | 2026-10-08 13:00 | 2026-10-08 15:00 | 2h | 2026-10-08 13:00 | 2026-10-08 15:00 | -3.38d | 0d | finish no earlier than 2026-10-08 15:00 |  | Bảo | 2h |  | 80,000 | 60,000 |  | S2-HOANG-013 | S2 | Kế hoạch | Biên bản mạng yếu |
| 115 | 1.3.3.13 | Chạy E2E và QA giao diện kịch bản 01–10 trên Flutter Web và Android |  | 6h | 2026-10-08 09:00 | 2026-10-08 16:00 | 104, 105, 109, 111, 112, 113, 100FF+4h, 78 |  |  | 2026-10-07 15:00 | 2026-10-08 12:00 | 6h | 2026-10-07 15:00 | 2026-10-08 12:00 | -3.38d | 0d | finish no earlier than 2026-10-08 12:00 |  | Bảo | 6h |  | 240,000 | 180,000 |  | S2-HOANG-010 | S2 | Kế hoạch | Log defect Sprint 2 |
| 116 | 1.3.3.14 | Ghi defect log và retest 10 kịch bản E2E: reproduction, owner, kết quả retest |  | 2h | 2026-10-09 09:00 | 2026-10-09 11:00 | 115, 114 |  |  | 2026-10-08 15:00 | 2026-10-08 17:00 | 2h | 2026-10-08 15:00 | 2026-10-08 17:00 | -3.38d | 0d | finish no earlier than 2026-10-08 17:00 |  | Bảo | 2h |  | 80,000 | 60,000 |  | S2-HOANG-014 | S2 | Kế hoạch | Defect log đã retest |
| 117 | 1.3.4 | Cổng Sprint 2: check-in, check-out, dọn, xác nhận, check-in lại; báo hỏng chặn nhận phòng; audit sau commit | milestone | 0d | 2026-10-09 17:00 | 2026-10-09 17:00 | 100, 116, 79, 81 |  |  | 2026-10-09 17:00 | 2026-10-09 17:00 | 0d | 2026-10-09 17:00 | 2026-10-09 17:00 | -4d | 0d | finish no earlier than 2026-10-09 17:00 |  | Bảo |  |  |  |  |  | S2-GATE | S2 | Kế hoạch | Biên bản cổng Sprint 2 |
| 118 | 1.4 | **Sprint 3 — Dashboard, accessibility và AI summary (06/10–19/10/2026)** |  | 22.5d | 2026-09-21 10:00 A | 2026-10-16 15:00 |  | 7% | 20.93d | 2026-09-21 10:00 | 2026-10-16 15:00 | 22.5d | 2026-09-21 10:00 | 2026-10-16 15:00 | 2.25d |  |  | 2026-10-19 17:00 |  | 115h | 8h | 5,365,000 | 3,195,000 | 400,000 |  |  |  |  |
| 119 | 1.4.1 | **Chốt KPI dashboard và hợp đồng AI summary** |  | 21.62d | 2026-09-21 10:00 A | 2026-10-15 16:00 |  | 53% | 10.09d | 2026-09-21 10:00 | 2026-10-15 16:00 | 21.62d | 2026-09-21 10:00 | 2026-10-15 16:00 | 0.62d |  |  |  |  | 15h | 8h | 1,110,000 | 450,000 | 400,000 |  |  |  |  |
| 120 | 1.4.1.1 | Chốt công thức KPI, mẫu số 0 và nhãn tổ hợp 3 trục trạng thái trên ô phòng |  | 2h | 2026-09-21 10:00 A | 2026-09-21 12:00 A | 77, 81 | 100% |  | 2026-09-21 10:00 | 2026-09-21 12:00 | 2h | 2026-09-21 10:00 | 2026-09-21 12:00 |  |  | finish no earlier than 2026-09-21 12:00 |  | Đạt | 2h | 2h | 100,000 | 60,000 | 100,000 | S3-DAT-001 | S3 | Kế hoạch | SRS dashboard canonical |
| 121 | 1.4.1.2 | Chốt fixture 50 phòng và số đếm kỳ vọng cho dashboard |  | 2h | 2026-09-21 13:00 A | 2026-09-21 15:00 A | 120 | 100% |  | 2026-09-21 13:00 | 2026-09-21 15:00 | 2h | 2026-09-21 13:00 | 2026-09-21 15:00 |  |  | finish no earlier than 2026-09-21 15:00 |  | Đạt | 2h | 2h | 100,000 | 60,000 | 100,000 | S3-DAT-002 | S3 | Kế hoạch | docs/qa/dashboard-fixture.md |
| 122 | 1.4.1.3 | Chốt provider AI, timeout 15 giây, trần chi phí 300.000 đồng và schema summary |  | 2h | 2026-09-21 15:00 A | 2026-09-21 17:00 A | 120, 121 | 100% |  | 2026-09-21 15:00 | 2026-09-21 17:00 | 2h | 2026-09-21 15:00 | 2026-09-21 17:00 |  |  | finish no earlier than 2026-09-21 17:00 |  | Đạt | 2h | 2h | 100,000 | 60,000 | 100,000 | S3-DAT-003 | S3 | Kế hoạch | ADR tích hợp AI |
| 123 | 1.4.1.4 | Duyệt nhãn AI và fallback để người dùng không hiểu summary là quyết định tự động |  | 1h | 2026-09-22 11:00 A | 2026-09-22 12:00 A | 122, 124 | 100% |  | 2026-09-22 11:00 | 2026-09-22 12:00 | 1h | 2026-09-22 11:00 | 2026-09-22 12:00 |  |  | finish no earlier than 2026-09-22 12:00 |  | Đạt | 1h | 1h | 50,000 | 30,000 | 50,000 | S3-DAT-006 | S3 | Kế hoạch | Copy nhãn tham khảo đã duyệt |
| 124 | 1.4.1.5 | Viết 20 kịch bản red-team AI và tiêu chí chấp nhận fallback |  | 3h | 2026-09-22 08:00 A | 2026-09-22 11:00 | 122 | 20% | 2.4h | 2026-09-22 08:00 | 2026-09-22 11:00 | 3h | 2026-09-22 08:00 | 2026-09-22 11:00 | 13.53d | 13.5d | finish no earlier than 2026-09-22 11:00 |  | Đạt; VPS [1 1]; Domain [1 1] | 3h | 0.6h | 510,000 | 90,000 | 30,000 | S3-DAT-004 | S3 | Kế hoạch | docs/qa/ai-evaluation.md |
| 125 | 1.4.1.6 | Review payload aggregate trước khi gọi OpenAI và chứng minh không có PII |  | 1h | 2026-10-07 16:00 A | 2026-10-07 17:00 | 124, 132, 123 | 20% | 0.8h | 2026-10-07 16:00 | 2026-10-07 17:00 | 1h | 2026-10-07 16:00 | 2026-10-07 17:00 | 2.9d | 0d | finish no earlier than 2026-10-07 17:00 |  | Đạt | 1h | 0.2h | 50,000 | 30,000 | 10,000 | S3-DAT-007 | S3 | Kế hoạch | Data contract không PII |
| 126 | 1.4.1.7 | Review PR token, accessibility và kỹ thuật của dashboard cùng màn AI |  | 4h | 2026-10-15 11:00 A | 2026-10-15 16:00 | 151, 139, 125 | 5% | 3.8h | 2026-10-15 11:00 | 2026-10-15 16:00 | 4h | 2026-10-15 11:00 | 2026-10-15 16:00 | 0.62d | 0d | finish no earlier than 2026-10-15 16:00 |  | Đạt | 4h | 0.2h | 200,000 | 120,000 | 10,000 | S3-DAT-005 | S3 | Kế hoạch | Checklist review đã ký |

Notes:
- 103: Mã: S2-HOANG-011 / Trạng thái: Kế hoạch / Đầu ra: Component confirmation / Bằng chứng: chưa có trong repository tại 24/09/2026 / Quan hệ gồm FS, SS, FF và SF. Việc ghi dữ liệu đi qua API, kiểm quyền, ghi audit, rồi mới phát Socket.IO.
- 104: Mã: S2-HOANG-001 / Trạng thái: Kế hoạch / Đầu ra: Màn check-in / Bằng chứng: chưa có trong repository tại 24/09/2026 / Quan hệ gồm FS, SS, FF và SF. Việc ghi dữ liệu đi qua API, kiểm quyền, ghi audit, rồi mới phát Socket.IO.
- 105: Mã: S2-HOANG-002 / Trạng thái: Kế hoạch / Đầu ra: Màn check-out / Bằng chứng: chưa có trong repository tại 24/09/2026 / Quan hệ gồm FS, SS, FF và SF. Việc ghi dữ liệu đi qua API, kiểm quyền, ghi audit, rồi mới phát Socket.IO.
- 106: Mã: S2-HOANG-012 / Trạng thái: Kế hoạch / Đầu ra: Component timeline / Bằng chứng: chưa có trong repository tại 24/09/2026 / Quan hệ gồm FS, SS, FF và SF. Việc ghi dữ liệu đi qua API, kiểm quyền, ghi audit, rồi mới phát Socket.IO.
- 107: Mã: S2-HOANG-003 / Trạng thái: Kế hoạch / Đầu ra: Màn my cleaning tasks / Bằng chứng: chưa có trong repository tại 24/09/2026 / Quan hệ gồm FS, SS, FF và SF. Việc ghi dữ liệu đi qua API, kiểm quyền, ghi audit, rồi mới phát Socket.IO.
- 108: Mã: S2-HOANG-004 / Trạng thái: Kế hoạch / Đầu ra: UI action dọn phòng / Bằng chứng: chưa có trong repository tại 24/09/2026 / Quan hệ gồm FS, SS, FF và SF. Việc ghi dữ liệu đi qua API, kiểm quyền, ghi audit, rồi mới phát Socket.IO.
- 109: Mã: S2-HOANG-005 / Trạng thái: Kế hoạch / Đầu ra: UI xác nhận dọn phòng / Bằng chứng: chưa có trong repository tại 24/09/2026 / Quan hệ gồm FS, SS, FF và SF. Việc ghi dữ liệu đi qua API, kiểm quyền, ghi audit, rồi mới phát Socket.IO.
- 110: Mã: S2-HOANG-006 / Trạng thái: Kế hoạch / Đầu ra: UI báo hỏng / Bằng chứng: chưa có trong repository tại 24/09/2026 / Quan hệ gồm FS, SS, FF và SF. Việc ghi dữ liệu đi qua API, kiểm quyền, ghi audit, rồi mới phát Socket.IO.
- 111: Mã: S2-HOANG-007 / Trạng thái: Kế hoạch / Đầu ra: UI maintenance task / Bằng chứng: chưa có trong repository tại 24/09/2026 / Quan hệ gồm FS, SS, FF và SF. Việc ghi dữ liệu đi qua API, kiểm quyền, ghi audit, rồi mới phát Socket.IO.
- 112: Mã: S2-HOANG-008 / Trạng thái: Kế hoạch / Đầu ra: UI audit log / Bằng chứng: chưa có trong repository tại 24/09/2026 / Quan hệ gồm FS, SS, FF và SF. Việc ghi dữ liệu đi qua API, kiểm quyền, ghi audit, rồi mới phát Socket.IO.
- 113: Mã: S2-HOANG-009 / Trạng thái: Kế hoạch / Đầu ra: UI conflict / Bằng chứng: chưa có trong repository tại 24/09/2026 / Quan hệ gồm FS, SS, FF và SF. Việc ghi dữ liệu đi qua API, kiểm quyền, ghi audit, rồi mới phát Socket.IO.
- 114: Mã: S2-HOANG-013 / Trạng thái: Kế hoạch / Đầu ra: Biên bản mạng yếu / Bằng chứng: chưa có trong repository tại 24/09/2026 / Quan hệ gồm FS, SS, FF và SF. Việc ghi dữ liệu đi qua API, kiểm quyền, ghi audit, rồi mới phát Socket.IO.
- 115: Mã: S2-HOANG-010 / Trạng thái: Kế hoạch / Đầu ra: Log defect Sprint 2 / Bằng chứng: chưa có trong repository tại 24/09/2026 / Quan hệ gồm FS, SS, FF và SF. Việc ghi dữ liệu đi qua API, kiểm quyền, ghi audit, rồi mới phát Socket.IO.
- 116: Mã: S2-HOANG-014 / Trạng thái: Kế hoạch / Đầu ra: Defect log đã retest / Bằng chứng: chưa có trong repository tại 24/09/2026 / Quan hệ gồm FS, SS, FF và SF. Việc ghi dữ liệu đi qua API, kiểm quyền, ghi audit, rồi mới phát Socket.IO.
- 117: Mã: S2-GATE / Trạng thái: Kế hoạch / Đầu ra: Biên bản cổng Sprint 2 / Bằng chứng: chưa có trong repository tại 24/09/2026 / Quan hệ gồm FS, SS, FF và SF. Việc ghi dữ liệu đi qua API, kiểm quyền, ghi audit, rồi mới phát Socket.IO.
- 120: Mã: S3-DAT-001 / Trạng thái: Kế hoạch / Đầu ra: SRS dashboard canonical / Bằng chứng: chưa có trong repository tại 24/09/2026 / Quan hệ gồm FS, SS, FF và SF. Việc ghi dữ liệu đi qua API, kiểm quyền, ghi audit, rồi mới phát Socket.IO.
- 121: Mã: S3-DAT-002 / Trạng thái: Kế hoạch / Đầu ra: docs/qa/dashboard-fixture.md / Bằng chứng: chưa có trong repository tại 24/09/2026 / Quan hệ gồm FS, SS, FF và SF. Việc ghi dữ liệu đi qua API, kiểm quyền, ghi audit, rồi mới phát Socket.IO.
- 122: Mã: S3-DAT-003 / Trạng thái: Kế hoạch / Đầu ra: ADR tích hợp AI / Bằng chứng: chưa có trong repository tại 24/09/2026 / Quan hệ gồm FS, SS, FF và SF. Việc ghi dữ liệu đi qua API, kiểm quyền, ghi audit, rồi mới phát Socket.IO.
- 123: Mã: S3-DAT-006 / Trạng thái: Kế hoạch / Đầu ra: Copy nhãn tham khảo đã duyệt / Bằng chứng: chưa có trong repository tại 24/09/2026 / Quan hệ gồm FS, SS, FF và SF. Việc ghi dữ liệu đi qua API, kiểm quyền, ghi audit, rồi mới phát Socket.IO.
- 124: Mã: S3-DAT-004 / Trạng thái: Kế hoạch / Đầu ra: docs/qa/ai-evaluation.md / Bằng chứng: chưa có trong repository tại 24/09/2026 / Quan hệ gồm FS, SS, FF và SF. Việc ghi dữ liệu đi qua API, kiểm quyền, ghi audit, rồi mới phát Socket.IO.
- 125: Mã: S3-DAT-007 / Trạng thái: Kế hoạch / Đầu ra: Data contract không PII / Bằng chứng: chưa có trong repository tại 24/09/2026 / Quan hệ gồm FS, SS, FF và SF. Việc ghi dữ liệu đi qua API, kiểm quyền, ghi audit, rồi mới phát Socket.IO.
- 126: Mã: S3-DAT-005 / Trạng thái: Kế hoạch / Đầu ra: Checklist review đã ký / Bằng chứng: chưa có trong repository tại 24/09/2026 / Quan hệ gồm FS, SS, FF và SF. Việc ghi dữ liệu đi qua API, kiểm quyền, ghi audit, rồi mới phát Socket.IO.

| ID | WBS | Task | Type | Duration | Start | Finish | Predecessors | Baseline start | Baseline finish | Baseline duration | Baseline 1 start | Baseline 1 finish | Total slack | Free slack | Constraint | Resources | Work | Cost | Baseline cost | Text1 | Text2 | Text3 | Text4 |
| --- | --- | --- | --- | --- | --- | --- | --- | --- | --- | --- | --- | --- | --- | --- | --- | --- | --- | --- | --- | --- | --- | --- | --- |
| 127 | 1.4.2 | **API dashboard, job quá hạn và AI summary phía server** |  | 6.5d | 2026-10-05 15:00 | 2026-10-13 10:00 |  | 2026-10-05 15:00 | 2026-10-13 10:00 | 6.5d | 2026-10-05 15:00 | 2026-10-13 10:00 | 0.03d |  |  |  | 51h | 2,295,000 | 1,275,000 |  |  |  |  |
| 128 | 1.4.2.1 | Viết query tổng hợp dashboard: đếm trạng thái, công suất, quá hạn, phòng ngừng phục vụ, bộ lọc |  | 5h | 2026-10-05 15:00 | 2026-10-06 11:00 | 120, 121, 101 | 2026-10-05 15:00 | 2026-10-06 11:00 | 5h | 2026-10-05 15:00 | 2026-10-06 11:00 | 0.03d | 0d | finish no earlier than 2026-10-06 11:00 | Hoàng | 5h | 225,000 | 125,000 | S3-BAO-001 | S3 | Kế hoạch | Test khớp fixture 50 phòng |
| 129 | 1.4.2.2 | Xem query plan dashboard và chỉ thêm index thực sự cần |  | 2h | 2026-10-06 11:00 | 2026-10-06 14:00 | 128 | 2026-10-06 11:00 | 2026-10-06 14:00 | 2h | 2026-10-06 11:00 | 2026-10-06 14:00 | 0.03d | 0d | finish no earlier than 2026-10-06 14:00 | Hoàng | 2h | 90,000 | 50,000 | S3-BAO-002 | S3 | Kế hoạch | Bằng chứng EXPLAIN |
| 130 | 1.4.2.3 | Thêm cache dashboard và cách vô hiệu sau event, không giữ số đếm cũ |  | 2h | 2026-10-07 09:00 | 2026-10-07 11:00 | 129, 131 | 2026-10-07 09:00 | 2026-10-07 11:00 | 2h | 2026-10-07 09:00 | 2026-10-07 11:00 | 0.03d | 0d | finish no earlier than 2026-10-07 11:00 | Hoàng | 2h | 90,000 | 50,000 | S3-BAO-010 | S3 | Kế hoạch | Test invalidation |
| 131 | 1.4.2.4 | Viết job quá hạn idempotent cho việc dọn và bảo trì, có audit và event |  | 4h | 2026-10-06 14:00 | 2026-10-07 09:00 | 128, 120, 92, 95, 129 | 2026-10-06 14:00 | 2026-10-07 09:00 | 4h | 2026-10-06 14:00 | 2026-10-07 09:00 | 0.03d | 0d | finish no earlier than 2026-10-07 09:00 | Hoàng | 4h | 180,000 | 100,000 | S3-BAO-003 | S3 | Kế hoạch | Test job overdue |
| 132 | 1.4.2.5 | Dựng bộ fact summary theo ca hoặc ngày, không PII, cùng đầu vào cho cùng kết quả |  | 4h | 2026-10-07 11:00 | 2026-10-07 16:00 | 122, 128, 96, 130 | 2026-10-07 11:00 | 2026-10-07 16:00 | 4h | 2026-10-07 11:00 | 2026-10-07 16:00 | 0.03d | 0d | finish no earlier than 2026-10-07 16:00 | Hoàng | 4h | 180,000 | 100,000 | S3-BAO-004 | S3 | Kế hoạch | Unit test privacy và fact |
| 133 | 1.4.2.6 | Viết adapter OpenAI Responses API, key chỉ ở server, parse response có cấu trúc |  | 4h | 2026-10-08 08:00 | 2026-10-08 12:00 | 132, 125 | 2026-10-08 08:00 | 2026-10-08 12:00 | 4h | 2026-10-08 08:00 | 2026-10-08 12:00 | 2.9d | 0d | finish no earlier than 2026-10-08 12:00 | Hoàng | 4h | 180,000 | 100,000 | S3-BAO-005 | S3 | Kế hoạch | Contract test bằng mock |
| 134 | 1.4.2.7 | Thêm schema version cho payload và output AI summary |  | 2h | 2026-10-12 15:00 | 2026-10-12 17:00 | 133, 138 | 2026-10-12 15:00 | 2026-10-12 17:00 | 2h | 2026-10-12 15:00 | 2026-10-12 17:00 | 3.5d | 0d | finish no earlier than 2026-10-12 17:00 | Hoàng | 2h | 90,000 | 50,000 | S3-BAO-012 | S3 | Kế hoạch | Test tương thích schema |
| 135 | 1.4.2.8 | Khống chế single-flight, ghi usage, abort sau 15 giây và trần 300.000 đồng |  | 3h | 2026-10-08 13:00 | 2026-10-08 16:00 | 133 | 2026-10-08 13:00 | 2026-10-08 16:00 | 3h | 2026-10-08 13:00 | 2026-10-08 16:00 | 2.9d | 0d | finish no earlier than 2026-10-08 16:00 | Hoàng | 3h | 135,000 | 75,000 | S3-BAO-006 | S3 | Kế hoạch | Unit test quota và timeout |
| 136 | 1.4.2.9 | Validator output AI: sai số hoặc bịa sự kiện thì trả báo cáo fallback tất định |  | 4h | 2026-10-08 16:00 | 2026-10-09 11:00 | 133, 135 | 2026-10-08 16:00 | 2026-10-09 11:00 | 4h | 2026-10-08 16:00 | 2026-10-09 11:00 | 2.9d | 0d | finish no earlier than 2026-10-09 11:00 | Hoàng | 4h | 180,000 | 100,000 | S3-BAO-007 | S3 | Kế hoạch | Test AI invalid |
| 137 | 1.4.2.10 | Lưu và đọc summary mới nhất theo kỳ, audit mỗi lần tạo |  | 3h | 2026-10-09 11:00 | 2026-10-09 15:00 | 136 | 2026-10-09 11:00 | 2026-10-09 15:00 | 3h | 2026-10-09 11:00 | 2026-10-09 15:00 | 2.9d | 0d | finish no earlier than 2026-10-09 15:00 | Hoàng | 3h | 135,000 | 75,000 | S3-BAO-008 | S3 | Kế hoạch | Test API summary |
| 138 | 1.4.2.11 | Gắn request ID và audit cho lượt tạo summary: ai tạo, kỳ nào, kết quả gì |  | 2h | 2026-10-12 13:00 | 2026-10-12 15:00 | 137, 139 | 2026-10-12 13:00 | 2026-10-12 15:00 | 2h | 2026-10-12 13:00 | 2026-10-12 15:00 | 3.5d | 0d | finish no earlier than 2026-10-12 15:00 | Hoàng | 2h | 90,000 | 50,000 | S3-BAO-011 | S3 | Kế hoạch | Test truy vết summary |
| 139 | 1.4.2.12 | Chạy 20 case chất lượng và an toàn AI: timeout, quota, privacy |  | 14h | 2026-10-09 15:00 | 2026-10-12 12:00 | 137, 124 | 2026-10-09 15:00 | 2026-10-12 12:00 | 14h | 2026-10-09 15:00 | 2026-10-12 12:00 | 2.9d | 0d | finish no earlier than 2026-10-12 12:00 | Hoàng | 14h | 630,000 | 350,000 | S3-BAO-009 | S3 | Kế hoạch | Bảng kết quả và test |
| 140 | 1.4.2.13 | Đo latency API dashboard và summary, ghi p50 và p95 |  | 2h | 2026-10-13 08:00 | 2026-10-13 10:00 | 139, 134 | 2026-10-13 08:00 | 2026-10-13 10:00 | 2h | 2026-10-13 08:00 | 2026-10-13 10:00 | 3.5d |  | finish no earlier than 2026-10-13 10:00 | Hoàng | 2h | 90,000 | 50,000 | S3-BAO-013 | S3 | Kế hoạch | Baseline latency trong QA report |
| 141 | 1.4.3 | **UI dashboard, AI summary, responsive và accessibility** |  | 6.12d | 2026-10-09 14:00 | 2026-10-16 15:00 |  | 2026-10-09 14:00 | 2026-10-16 15:00 | 6.12d | 2026-10-09 14:00 | 2026-10-16 15:00 | 0d |  |  |  | 49h | 1,960,000 | 1,470,000 |  |  |  |  |
| 142 | 1.4.3.1 | Tạo formatter giờ Việt Nam và tỷ lệ; hiện N/A khi mẫu số KPI bằng 0 |  | 1h | 2026-10-12 15:00 | 2026-10-12 16:00 | 120, 143 | 2026-10-12 15:00 | 2026-10-12 16:00 | 1h | 2026-10-12 15:00 | 2026-10-12 16:00 | 0d |  | finish no earlier than 2026-10-12 16:00 | Bảo | 1h | 40,000 | 30,000 | S3-HOANG-010 | S3 | Kế hoạch | Formatter dùng chung |
| 143 | 1.4.3.2 | Tạo skeleton, loading và error của dashboard, có nút thử lại |  | 2h | 2026-10-12 13:00 | 2026-10-12 15:00 | 120, 149 | 2026-10-12 13:00 | 2026-10-12 15:00 | 2h | 2026-10-12 13:00 | 2026-10-12 15:00 | 0d |  | finish no earlier than 2026-10-12 15:00 | Bảo | 2h | 80,000 | 60,000 | S3-HOANG-009 | S3 | Kế hoạch | State loading/error |
| 144 | 1.4.3.3 | Layout dashboard Web: header KPI, lưới 50 phòng, chú giải màu semantic |  | 5h | 2026-10-12 16:00 | 2026-10-13 12:00 | 120, 128SF+2h, 143, 142 | 2026-10-12 16:00 | 2026-10-13 12:00 | 5h | 2026-10-12 16:00 | 2026-10-13 12:00 | 0d |  | finish no earlier than 2026-10-13 12:00 | Bảo | 5h | 200,000 | 150,000 | S3-HOANG-001 | S3 | Kế hoạch | Bằng chứng visual QA |
| 145 | 1.4.3.4 | Bộ lọc tầng và trạng thái, panel chi tiết phòng, trạng thái rỗng và lỗi |  | 4h | 2026-10-13 13:00 | 2026-10-13 17:00 | 144 | 2026-10-13 13:00 | 2026-10-13 17:00 | 4h | 2026-10-13 13:00 | 2026-10-13 17:00 | 0d |  | finish no earlier than 2026-10-13 17:00 | Bảo | 4h | 160,000 | 120,000 | S3-HOANG-002 | S3 | Kế hoạch | Widget test filter |
| 146 | 1.4.3.5 | Refresh realtime dashboard: chỉ cập nhật ô và KPI bị ảnh hưởng, hiện trạng thái kết nối |  | 3h | 2026-10-14 08:00 | 2026-10-14 11:00 | 144, 130SF+1h, 131SF+2h, 145 | 2026-10-14 08:00 | 2026-10-14 11:00 | 3h | 2026-10-14 08:00 | 2026-10-14 11:00 | 0d |  | finish no earlier than 2026-10-14 11:00 | Bảo | 3h | 120,000 | 90,000 | S3-HOANG-003 | S3 | Kế hoạch | Minh chứng hai client |
| 147 | 1.4.3.6 | Hiện việc quá hạn: nhãn ưu tiên, số đếm, deep-link sang task hoặc nhật ký |  | 3h | 2026-10-14 11:00 | 2026-10-14 15:00 | 144, 131SF+2h, 146 | 2026-10-14 11:00 | 2026-10-14 15:00 | 3h | 2026-10-14 11:00 | 2026-10-14 15:00 | 0d |  | finish no earlier than 2026-10-14 15:00 | Bảo | 3h | 120,000 | 90,000 | S3-HOANG-004 | S3 | Kế hoạch | Test accessibility overdue |
| 148 | 1.4.3.7 | Màn AI summary: chọn kỳ, nút tạo, trạng thái disabled và loading, các mục kết quả |  | 12h | 2026-10-09 14:00 | 2026-10-12 09:00 | 137SF+2h, 123, 116 | 2026-10-09 14:00 | 2026-10-12 09:00 | 12h | 2026-10-09 14:00 | 2026-10-12 09:00 | 0d |  | finish no earlier than 2026-10-12 09:00 | Bảo | 12h | 480,000 | 360,000 | S3-HOANG-005 | S3 | Kế hoạch | Widget test summary |
| 149 | 1.4.3.8 | State lỗi AI: timeout, hết quota, output invalid, kỳ không có dữ liệu, nút thử lại |  | 3h | 2026-10-12 09:00 | 2026-10-12 12:00 | 148, 136SF+2h | 2026-10-12 09:00 | 2026-10-12 12:00 | 3h | 2026-10-12 09:00 | 2026-10-12 12:00 | 0d |  | finish no earlier than 2026-10-12 12:00 | Bảo | 3h | 120,000 | 90,000 | S3-HOANG-006 | S3 | Kế hoạch | Test fallback UI |
| 150 | 1.4.3.9 | Kiểm thử giao diện fallback AI và kỳ rỗng, lưu ảnh từng state |  | 2h | 2026-10-15 14:00 | 2026-10-15 16:00 | 149, 152 | 2026-10-15 14:00 | 2026-10-15 16:00 | 2h | 2026-10-15 14:00 | 2026-10-15 16:00 | 0d |  | finish no earlier than 2026-10-15 16:00 | Bảo | 2h | 80,000 | 60,000 | S3-HOANG-012 | S3 | Kế hoạch | Ảnh evidence từng state |
| 151 | 1.4.3.10 | Chỉnh responsive desktop, tablet, mobile; touch target và tương phản |  | 5h | 2026-10-14 15:00 | 2026-10-15 11:00 | 145, 146, 147, 149 | 2026-10-14 15:00 | 2026-10-15 11:00 | 5h | 2026-10-14 15:00 | 2026-10-15 11:00 | 0d |  | finish no earlier than 2026-10-15 11:00 | Bảo | 5h | 200,000 | 150,000 | S3-HOANG-007 | S3 | Kế hoạch | Checklist cross-device |
| 152 | 1.4.3.11 | Kiểm thử keyboard navigation dashboard Web: thứ tự focus và focus nhìn thấy |  | 2h | 2026-10-15 11:00 | 2026-10-15 14:00 | 151 | 2026-10-15 11:00 | 2026-10-15 14:00 | 2h | 2026-10-15 11:00 | 2026-10-15 14:00 | 0d |  | finish no earlier than 2026-10-15 14:00 | Bảo | 2h | 80,000 | 60,000 | S3-HOANG-011 | S3 | Kế hoạch | Ghi nhận focus order |
| 153 | 1.4.3.12 | QA đối soát fixture 50 phòng, 100 cập nhật realtime và 20 case AI |  | 7h | 2026-10-15 16:00 | 2026-10-16 15:00 | 151, 139FF+4h, 152, 150 | 2026-10-15 16:00 | 2026-10-16 15:00 | 7h | 2026-10-15 16:00 | 2026-10-16 15:00 | 0d |  | finish no earlier than 2026-10-16 15:00 | Bảo | 7h | 280,000 | 210,000 | S3-HOANG-008 | S3 | Kế hoạch | docs/qa/sprint-3.md |
| 154 | 1.4.4 | Cổng Sprint 3: dashboard khớp fixture, AI không gửi PII, fallback 15 giây và trần 300.000 đồng | milestone | 0d | 2026-10-16 15:00 | 2026-10-16 15:00 | 153, 140, 126 | 2026-10-16 15:00 | 2026-10-16 15:00 | 0d | 2026-10-16 15:00 | 2026-10-16 15:00 | 2.25d |  | finish no earlier than 2026-10-16 15:00 | Bảo |  |  |  | S3-GATE | S3 | Kế hoạch | Biên bản cổng Sprint 3 |

Notes:
- 128: Mã: S3-BAO-001 / Trạng thái: Kế hoạch / Đầu ra: Test khớp fixture 50 phòng / Bằng chứng: chưa có trong repository tại 24/09/2026 / Quan hệ gồm FS, SS, FF và SF. Việc ghi dữ liệu đi qua API, kiểm quyền, ghi audit, rồi mới phát Socket.IO.
- 129: Mã: S3-BAO-002 / Trạng thái: Kế hoạch / Đầu ra: Bằng chứng EXPLAIN / Bằng chứng: chưa có trong repository tại 24/09/2026 / Quan hệ gồm FS, SS, FF và SF. Việc ghi dữ liệu đi qua API, kiểm quyền, ghi audit, rồi mới phát Socket.IO.
- 130: Mã: S3-BAO-010 / Trạng thái: Kế hoạch / Đầu ra: Test invalidation / Bằng chứng: chưa có trong repository tại 24/09/2026 / Quan hệ gồm FS, SS, FF và SF. Việc ghi dữ liệu đi qua API, kiểm quyền, ghi audit, rồi mới phát Socket.IO.
- 131: Mã: S3-BAO-003 / Trạng thái: Kế hoạch / Đầu ra: Test job overdue / Bằng chứng: chưa có trong repository tại 24/09/2026 / Quan hệ gồm FS, SS, FF và SF. Việc ghi dữ liệu đi qua API, kiểm quyền, ghi audit, rồi mới phát Socket.IO.
- 132: Mã: S3-BAO-004 / Trạng thái: Kế hoạch / Đầu ra: Unit test privacy và fact / Bằng chứng: chưa có trong repository tại 24/09/2026 / Quan hệ gồm FS, SS, FF và SF. Việc ghi dữ liệu đi qua API, kiểm quyền, ghi audit, rồi mới phát Socket.IO.
- 133: Mã: S3-BAO-005 / Trạng thái: Kế hoạch / Đầu ra: Contract test bằng mock / Bằng chứng: chưa có trong repository tại 24/09/2026 / Quan hệ gồm FS, SS, FF và SF. Việc ghi dữ liệu đi qua API, kiểm quyền, ghi audit, rồi mới phát Socket.IO.
- 134: Mã: S3-BAO-012 / Trạng thái: Kế hoạch / Đầu ra: Test tương thích schema / Bằng chứng: chưa có trong repository tại 24/09/2026 / Quan hệ gồm FS, SS, FF và SF. Việc ghi dữ liệu đi qua API, kiểm quyền, ghi audit, rồi mới phát Socket.IO.
- 135: Mã: S3-BAO-006 / Trạng thái: Kế hoạch / Đầu ra: Unit test quota và timeout / Bằng chứng: chưa có trong repository tại 24/09/2026 / Quan hệ gồm FS, SS, FF và SF. Việc ghi dữ liệu đi qua API, kiểm quyền, ghi audit, rồi mới phát Socket.IO.
- 136: Mã: S3-BAO-007 / Trạng thái: Kế hoạch / Đầu ra: Test AI invalid / Bằng chứng: chưa có trong repository tại 24/09/2026 / Quan hệ gồm FS, SS, FF và SF. Việc ghi dữ liệu đi qua API, kiểm quyền, ghi audit, rồi mới phát Socket.IO.
- 137: Mã: S3-BAO-008 / Trạng thái: Kế hoạch / Đầu ra: Test API summary / Bằng chứng: chưa có trong repository tại 24/09/2026 / Quan hệ gồm FS, SS, FF và SF. Việc ghi dữ liệu đi qua API, kiểm quyền, ghi audit, rồi mới phát Socket.IO.
- 138: Mã: S3-BAO-011 / Trạng thái: Kế hoạch / Đầu ra: Test truy vết summary / Bằng chứng: chưa có trong repository tại 24/09/2026 / Quan hệ gồm FS, SS, FF và SF. Việc ghi dữ liệu đi qua API, kiểm quyền, ghi audit, rồi mới phát Socket.IO.
- 139: Mã: S3-BAO-009 / Trạng thái: Kế hoạch / Đầu ra: Bảng kết quả và test / Bằng chứng: chưa có trong repository tại 24/09/2026 / Quan hệ gồm FS, SS, FF và SF. Việc ghi dữ liệu đi qua API, kiểm quyền, ghi audit, rồi mới phát Socket.IO.
- 140: Mã: S3-BAO-013 / Trạng thái: Kế hoạch / Đầu ra: Baseline latency trong QA report / Bằng chứng: chưa có trong repository tại 24/09/2026 / Quan hệ gồm FS, SS, FF và SF. Việc ghi dữ liệu đi qua API, kiểm quyền, ghi audit, rồi mới phát Socket.IO.
- 142: Mã: S3-HOANG-010 / Trạng thái: Kế hoạch / Đầu ra: Formatter dùng chung / Bằng chứng: chưa có trong repository tại 24/09/2026 / Quan hệ gồm FS, SS, FF và SF. Việc ghi dữ liệu đi qua API, kiểm quyền, ghi audit, rồi mới phát Socket.IO.
- 143: Mã: S3-HOANG-009 / Trạng thái: Kế hoạch / Đầu ra: State loading/error / Bằng chứng: chưa có trong repository tại 24/09/2026 / Quan hệ gồm FS, SS, FF và SF. Việc ghi dữ liệu đi qua API, kiểm quyền, ghi audit, rồi mới phát Socket.IO.
- 144: Mã: S3-HOANG-001 / Trạng thái: Kế hoạch / Đầu ra: Bằng chứng visual QA / Bằng chứng: chưa có trong repository tại 24/09/2026 / Quan hệ gồm FS, SS, FF và SF. Việc ghi dữ liệu đi qua API, kiểm quyền, ghi audit, rồi mới phát Socket.IO.
- 145: Mã: S3-HOANG-002 / Trạng thái: Kế hoạch / Đầu ra: Widget test filter / Bằng chứng: chưa có trong repository tại 24/09/2026 / Quan hệ gồm FS, SS, FF và SF. Việc ghi dữ liệu đi qua API, kiểm quyền, ghi audit, rồi mới phát Socket.IO.
- 146: Mã: S3-HOANG-003 / Trạng thái: Kế hoạch / Đầu ra: Minh chứng hai client / Bằng chứng: chưa có trong repository tại 24/09/2026 / Quan hệ gồm FS, SS, FF và SF. Việc ghi dữ liệu đi qua API, kiểm quyền, ghi audit, rồi mới phát Socket.IO.
- 147: Mã: S3-HOANG-004 / Trạng thái: Kế hoạch / Đầu ra: Test accessibility overdue / Bằng chứng: chưa có trong repository tại 24/09/2026 / Quan hệ gồm FS, SS, FF và SF. Việc ghi dữ liệu đi qua API, kiểm quyền, ghi audit, rồi mới phát Socket.IO.
- 148: Mã: S3-HOANG-005 / Trạng thái: Kế hoạch / Đầu ra: Widget test summary / Bằng chứng: chưa có trong repository tại 24/09/2026 / Quan hệ gồm FS, SS, FF và SF. Việc ghi dữ liệu đi qua API, kiểm quyền, ghi audit, rồi mới phát Socket.IO.
- 149: Mã: S3-HOANG-006 / Trạng thái: Kế hoạch / Đầu ra: Test fallback UI / Bằng chứng: chưa có trong repository tại 24/09/2026 / Quan hệ gồm FS, SS, FF và SF. Việc ghi dữ liệu đi qua API, kiểm quyền, ghi audit, rồi mới phát Socket.IO.
- 150: Mã: S3-HOANG-012 / Trạng thái: Kế hoạch / Đầu ra: Ảnh evidence từng state / Bằng chứng: chưa có trong repository tại 24/09/2026 / Quan hệ gồm FS, SS, FF và SF. Việc ghi dữ liệu đi qua API, kiểm quyền, ghi audit, rồi mới phát Socket.IO.
- 151: Mã: S3-HOANG-007 / Trạng thái: Kế hoạch / Đầu ra: Checklist cross-device / Bằng chứng: chưa có trong repository tại 24/09/2026 / Quan hệ gồm FS, SS, FF và SF. Việc ghi dữ liệu đi qua API, kiểm quyền, ghi audit, rồi mới phát Socket.IO.
- 152: Mã: S3-HOANG-011 / Trạng thái: Kế hoạch / Đầu ra: Ghi nhận focus order / Bằng chứng: chưa có trong repository tại 24/09/2026 / Quan hệ gồm FS, SS, FF và SF. Việc ghi dữ liệu đi qua API, kiểm quyền, ghi audit, rồi mới phát Socket.IO.
- 153: Mã: S3-HOANG-008 / Trạng thái: Kế hoạch / Đầu ra: docs/qa/sprint-3.md / Bằng chứng: chưa có trong repository tại 24/09/2026 / Quan hệ gồm FS, SS, FF và SF. Việc ghi dữ liệu đi qua API, kiểm quyền, ghi audit, rồi mới phát Socket.IO.
- 154: Mã: S3-GATE / Trạng thái: Kế hoạch / Đầu ra: Biên bản cổng Sprint 3 / Bằng chứng: chưa có trong repository tại 24/09/2026 / Quan hệ gồm FS, SS, FF và SF. Việc ghi dữ liệu đi qua API, kiểm quyền, ghi audit, rồi mới phát Socket.IO.

| ID | WBS | Task | Type | Duration | Start | Finish | Predecessors | Baseline start | Baseline finish | Baseline duration | Baseline 1 start | Baseline 1 finish | Total slack | Free slack | Constraint | Deadline | Resources | Work | Cost | Baseline cost | Text1 | Text2 | Text3 | Text4 |
| --- | --- | --- | --- | --- | --- | --- | --- | --- | --- | --- | --- | --- | --- | --- | --- | --- | --- | --- | --- | --- | --- | --- | --- | --- |
| 155 | 1.5 | **Sprint 4 — Security, CI/CD, UAT, triển khai và bàn giao (20/10–27/10/2026)** |  | 9.5d | 2026-10-15 16:00 | 2026-10-27 11:00 |  | 2026-10-15 16:00 | 2026-10-27 11:00 | 9.5d | 2026-10-15 16:00 | 2026-10-27 11:00 | 0d |  |  | 2026-10-27 17:00 |  | 115h | 5,330,000 | 3,270,000 |  |  |  |  |
| 156 | 1.5.1 | **Security, CI/CD, staging, rollback và hồ sơ bàn giao** |  | 9.5d | 2026-10-15 16:00 | 2026-10-27 11:00 |  | 2026-10-15 16:00 | 2026-10-27 11:00 | 9.5d | 2026-10-15 16:00 | 2026-10-27 11:00 | 0d |  |  |  |  | 23h | 1,150,000 | 690,000 |  |  |  |  |
| 157 | 1.5.1.1 | Đóng băng phạm vi và mở bảng triage: mức lỗi, owner, SLA, ghi chú hằng ngày |  | 2h | 2026-10-15 16:00 | 2026-10-16 09:00 | 120, 126 | 2026-10-15 16:00 | 2026-10-16 09:00 | 2h | 2026-10-15 16:00 | 2026-10-16 09:00 | 0.62d |  | finish no earlier than 2026-10-16 09:00 |  | Đạt | 2h | 100,000 | 60,000 | S4-DAT-001 | S4 | Kế hoạch | Bảng triage |
| 158 | 1.5.1.3 | Security review: RBAC, validation, CORS, rate limit, secret scan, dependency scan |  | 5h | 2026-10-19 15:00 | 2026-10-20 11:00 | 157, 165FF | 2026-10-19 15:00 | 2026-10-20 11:00 | 5h | 2026-10-19 15:00 | 2026-10-20 11:00 | 0d |  | finish no earlier than 2026-10-20 11:00 |  | Đạt | 5h | 250,000 | 150,000 | S4-DAT-002 | S4 | Kế hoạch | Security checklist |
| 159 | 1.5.1.4 | Dựng GitHub Actions: install, lint, test, build API và Flutter trên pull request |  | 4h | 2026-10-20 11:00 | 2026-10-20 16:00 | 157, 52, 68, 158 | 2026-10-20 11:00 | 2026-10-20 16:00 | 4h | 2026-10-20 11:00 | 2026-10-20 16:00 | 0d |  | finish no earlier than 2026-10-20 16:00 |  | Đạt | 4h | 200,000 | 120,000 | S4-DAT-003 | S4 | Kế hoạch | Link workflow run |
| 160 | 1.5.1.5 | Viết runbook deploy và rollback: tên biến môi trường, thứ tự migration, smoke, rollback |  | 4h | 2026-10-20 16:00 | 2026-10-21 11:00 | 159 | 2026-10-20 16:00 | 2026-10-21 11:00 | 4h | 2026-10-20 16:00 | 2026-10-21 11:00 | 0d |  | finish no earlier than 2026-10-21 11:00 |  | Đạt | 4h | 200,000 | 120,000 | S4-DAT-004 | S4 | Kế hoạch | docs/runbooks/deploy.md |
| 161 | 1.5.1.7 | Viết script nghiệm thu: tài khoản 3 vai trò, reset data demo, thứ tự kịch bản, kết quả kỳ vọng |  | 3h | 2026-10-21 11:00 | 2026-10-21 15:00 | 157, 78, 121, 160 | 2026-10-21 11:00 | 2026-10-21 15:00 | 3h | 2026-10-21 11:00 | 2026-10-21 15:00 | 0d |  | finish no earlier than 2026-10-21 15:00 |  | Đạt | 3h | 150,000 | 90,000 | S4-DAT-005 | S4 | Kế hoạch | docs/qa/acceptance.md |
| 162 | 1.5.1.8 | Đóng gói bàn giao: kiến trúc, ERD, API, cách chạ + Visual regression 3 vai trò tại 3 breakpoint, lư + Cài APK lên thiết bị Android mục tiêu và chạy lo + Chuẩn bị ảnh màn hình và kịch bản trình diễn khớ |  | 5h | 2026-10-26 15:00 | 2026-10-27 11:00 | 160, 161, 173, 176, 177 | 2026-10-26 15:00 | 2026-10-27 11:00 | 5h | 2026-10-26 15:00 | 2026-10-27 11:00 | 0d |  | finish no earlier than 2026-10-27 11:00 |  | Đạt | 5h | 250,000 | 150,000 | S4-DAT-006 | S4 | Kế hoạch | Handover pack |
| 163 | 1.5.2 | **Gia cố backend, diễn tập migration, APK Android** |  | 4.75d | 2026-10-16 15:00 | 2026-10-22 12:00 |  | 2026-10-16 15:00 | 2026-10-22 12:00 | 4.75d | 2026-10-16 15:00 | 2026-10-22 12:00 | 0d |  |  |  |  | 36h | 1,620,000 | 900,000 |  |  |  |  |
| 164 | 1.5.2.1 | Sửa defect backend blocker và critical, mỗi lỗi có issue, PR và regression test |  | 2d | 2026-10-16 15:00 | 2026-10-19 15:00 | 157, 116, 153, 140 | 2026-10-16 15:00 | 2026-10-19 15:00 | 2d | 2026-10-16 15:00 | 2026-10-19 15:00 | 0d |  | finish no earlier than 2026-10-19 15:00 |  | Hoàng | 16h | 720,000 | 400,000 | S4-BAO-001 | S4 | Kế hoạch | PR và test hồi quy |
| 165 | 1.5.2.2 | Chạy full test backend và đo 100 cập nhật với 10 phiên Socket.IO |  | 5h | 2026-10-19 15:00 | 2026-10-20 11:00 | 164 | 2026-10-19 15:00 | 2026-10-20 11:00 | 5h | 2026-10-19 15:00 | 2026-10-20 11:00 | 0d |  | finish no earlier than 2026-10-20 11:00 |  | Hoàng | 5h | 225,000 | 125,000 | S4-BAO-003 | S4 | Kế hoạch | Báo cáo CI và đo tải |
| 166 | 1.5.2.3 | Audit lockfile npm và pub, cập nhật bản vá không còn CVE critical chấp nhận được |  | 2h | 2026-10-20 16:00 | 2026-10-21 09:00 | 165, 171 | 2026-10-20 16:00 | 2026-10-21 09:00 | 2h | 2026-10-20 16:00 | 2026-10-21 09:00 | 2.12d | 0.25d | finish no earlier than 2026-10-21 09:00 |  | Hoàng | 2h | 90,000 | 50,000 | S4-BAO-006 | S4 | Kế hoạch | Kết quả audit |
| 167 | 1.5.2.4 | Diễn tập migration trên bản sao staging: backup, migrate, seed, rollback |  | 4h | 2026-10-21 11:00 | 2026-10-21 16:00 | 160, 166 | 2026-10-21 11:00 | 2026-10-21 16:00 | 4h | 2026-10-21 11:00 | 2026-10-21 16:00 | 1.88d | 0d | finish no earlier than 2026-10-21 16:00 |  | Hoàng | 4h | 180,000 | 100,000 | S4-BAO-002 | S4 | Kế hoạch | Nhật ký diễn tập |
| 168 | 1.5.2.5 | Test restore PostgreSQL từ backup staging và ghi thời gian cùng dữ liệu demo |  | 2h | 2026-10-22 09:00 | 2026-10-22 11:00 | 167, 169 | 2026-10-22 09:00 | 2026-10-22 11:00 | 2h | 2026-10-22 09:00 | 2026-10-22 11:00 | 3.88d | 0d | finish no earlier than 2026-10-22 11:00 |  | Hoàng | 2h | 90,000 | 50,000 | S4-BAO-007 | S4 | Kế hoạch | Biên bản restore |
| 169 | 1.5.2.6 | Smoke API sau deploy: health, login, một lệnh vận hành, socket reconnect |  | 2h | 2026-10-21 16:00 | 2026-10-22 09:00 | 167, 160 | 2026-10-21 16:00 | 2026-10-22 09:00 | 2h | 2026-10-21 16:00 | 2026-10-22 09:00 | 1.88d | 0d | finish no earlier than 2026-10-22 09:00 |  | Hoàng | 2h | 90,000 | 50,000 | S4-BAO-004 | S4 | Kế hoạch | Kết quả smoke |
| 170 | 1.5.2.7 | Rà sample log production hoặc staging, xác nhận không có secret hay PII |  | 1h | 2026-10-22 11:00 | 2026-10-22 12:00 | 169, 168 | 2026-10-22 11:00 | 2026-10-22 12:00 | 1h | 2026-10-22 11:00 | 2026-10-22 12:00 | 3.88d |  | finish no earlier than 2026-10-22 12:00 |  | Hoàng | 1h | 45,000 | 25,000 | S4-BAO-008 | S4 | Kế hoạch | Sample log đã redact |
| 171 | 1.5.2.8 | Đóng gói APK Android release: version, đường ký, cài thử |  | 4h | 2026-10-20 11:00 | 2026-10-20 16:00 | 164, 165 | 2026-10-20 11:00 | 2026-10-20 16:00 | 4h | 2026-10-20 11:00 | 2026-10-20 16:00 | 2.12d | 0d | finish no earlier than 2026-10-20 16:00 |  | Hoàng | 4h | 180,000 | 100,000 | S4-BAO-005 | S4 | Kế hoạch | APK và bằng chứng cài |
| 172 | 1.5.3 | **UAT, responsive, accessibility và bàn giao demo** |  | 4d | 2026-10-21 15:00 | 2026-10-26 15:00 |  | 2026-10-21 15:00 | 2026-10-26 15:00 | 4d | 2026-10-21 15:00 | 2026-10-26 15:00 | 0d |  |  |  |  | 56h | 2,560,000 | 1,680,000 |  |  |  |  |
| 173 | 1.5.3.1 | Viết release checklist và tiêu chí go/no-go, cần + Regression đủ 3 vai trò trên Flutter Web và Andr + Lập inventory biến môi trường: chỉ tên biến, own |  | 1d | 2026-10-21 15:00 | 2026-10-22 15:00 | 161, 153, 157, 160 | 2026-10-21 15:00 | 2026-10-22 15:00 | 1d | 2026-10-21 15:00 | 2026-10-22 15:00 | 0d |  | finish no earlier than 2026-10-22 15:00 |  | Bảo; Đạt | 16h | 720,000 | 480,000 | S4-HOANG-001 | S4 | Kế hoạch | Ma trận pass/fail |
| 174 | 1.5.3.2 | QA Chrome, Edge, bề rộng desktop và tablet, cùng máy Android mục tiêu |  | 4h | 2026-10-22 15:00 | 2026-10-23 10:00 | 173 | 2026-10-22 15:00 | 2026-10-23 10:00 | 4h | 2026-10-22 15:00 | 2026-10-23 10:00 | 0d |  | finish no earlier than 2026-10-23 10:00 |  | Bảo; Đạt | 8h | 360,000 | 240,000 | S4-HOANG-002 | S4 | Kế hoạch | Danh sách defect responsive |
| 175 | 1.5.3.3 | Accessibility pass: focus, bàn phím trên Web, nhãn, tương phản, touch target |  | 3h | 2026-10-23 10:00 | 2026-10-23 14:00 | 173FF, 174 | 2026-10-23 10:00 | 2026-10-23 14:00 | 3h | 2026-10-23 10:00 | 2026-10-23 14:00 | 0d |  | finish no earlier than 2026-10-23 14:00 |  | Bảo; Đạt | 6h | 270,000 | 180,000 | S4-HOANG-003 | S4 | Kế hoạch | Checklist accessibility |
| 176 | 1.5.3.4 | Đối chiếu màn hình với Design Token, gỡ mã màu cứng không nhất quán |  | 3h | 2026-10-23 14:00 | 2026-10-23 17:00 | 174, 175 | 2026-10-23 14:00 | 2026-10-23 17:00 | 3h | 2026-10-23 14:00 | 2026-10-23 17:00 | 0d |  | finish no earlier than 2026-10-23 17:00 |  | Bảo; Đạt | 6h | 270,000 | 180,000 | S4-HOANG-004 | S4 | Kế hoạch | Nhật ký visual review |
| 177 | 1.5.3.6 | Diễn tập UAT theo script nghiệm thu, ghi defect và xác nhận bản sửa |  | 14h | 2026-10-25 08:00 | 2026-10-26 15:00 | 176, 169, 161 | 2026-10-25 08:00 | 2026-10-26 15:00 | 14h | 2026-10-25 08:00 | 2026-10-26 15:00 | 0d |  | finish no earlier than 2026-10-26 15:00 |  | Bảo; Đạt | 20h | 940,000 | 600,000 | S4-HOANG-005 | S4 | Kế hoạch | Biên bản UAT |
| 178 | 1.5.4 | Bàn giao 27/10/2026: Web HTTPS, APK Android, CI xanh, runbook rollback và handover pack | milestone | 0d | 2026-10-27 11:00 | 2026-10-27 11:00 | 162, 170, 158, 173 | 2026-10-27 11:00 | 2026-10-27 11:00 | 0d | 2026-10-27 11:00 | 2026-10-27 11:00 | 0d |  | finish no earlier than 2026-10-27 11:00 | 2026-10-27 17:00 | Bảo; Đạt |  |  |  | S4-GATE | S4 | Kế hoạch | Biên bản bàn giao |

Notes:
- 157: Mã: S4-DAT-001 / Trạng thái: Kế hoạch / Đầu ra: Bảng triage / Bằng chứng: chưa có trong repository tại 24/09/2026 / Quan hệ gồm FS, SS, FF và SF. Việc ghi dữ liệu đi qua API, kiểm quyền, ghi audit, rồi mới phát Socket.IO.
- 158: Mã: S4-DAT-002 / Trạng thái: Kế hoạch / Đầu ra: Security checklist / Bằng chứng: chưa có trong repository tại 24/09/2026 / Quan hệ gồm FS, SS, FF và SF. Việc ghi dữ liệu đi qua API, kiểm quyền, ghi audit, rồi mới phát Socket.IO.
- 159: Mã: S4-DAT-003 / Trạng thái: Kế hoạch / Đầu ra: Link workflow run / Bằng chứng: chưa có trong repository tại 24/09/2026 / Quan hệ gồm FS, SS, FF và SF. Việc ghi dữ liệu đi qua API, kiểm quyền, ghi audit, rồi mới phát Socket.IO.
- 160: Mã: S4-DAT-004 / Trạng thái: Kế hoạch / Đầu ra: docs/runbooks/deploy.md / Bằng chứng: chưa có trong repository tại 24/09/2026 / Quan hệ gồm FS, SS, FF và SF. Việc ghi dữ liệu đi qua API, kiểm quyền, ghi audit, rồi mới phát Socket.IO.
- 161: Mã: S4-DAT-005 / Trạng thái: Kế hoạch / Đầu ra: docs/qa/acceptance.md / Bằng chứng: chưa có trong repository tại 24/09/2026 / Quan hệ gồm FS, SS, FF và SF. Việc ghi dữ liệu đi qua API, kiểm quyền, ghi audit, rồi mới phát Socket.IO.
- 162: Mã: S4-DAT-006 / Trạng thái: Kế hoạch / Đầu ra: Handover pack / Bằng chứng: chưa có trong repository tại 24/09/2026 / Quan hệ gồm FS, SS, FF và SF. Việc ghi dữ liệu đi qua API, kiểm quyền, ghi audit, rồi mới phát Socket.IO.
- 164: Mã: S4-BAO-001 / Trạng thái: Kế hoạch / Đầu ra: PR và test hồi quy / Bằng chứng: chưa có trong repository tại 24/09/2026 / Quan hệ gồm FS, SS, FF và SF. Việc ghi dữ liệu đi qua API, kiểm quyền, ghi audit, rồi mới phát Socket.IO.
- 165: Mã: S4-BAO-003 / Trạng thái: Kế hoạch / Đầu ra: Báo cáo CI và đo tải / Bằng chứng: chưa có trong repository tại 24/09/2026 / Quan hệ gồm FS, SS, FF và SF. Việc ghi dữ liệu đi qua API, kiểm quyền, ghi audit, rồi mới phát Socket.IO.
- 166: Mã: S4-BAO-006 / Trạng thái: Kế hoạch / Đầu ra: Kết quả audit / Bằng chứng: chưa có trong repository tại 24/09/2026 / Quan hệ gồm FS, SS, FF và SF. Việc ghi dữ liệu đi qua API, kiểm quyền, ghi audit, rồi mới phát Socket.IO.
- 167: Mã: S4-BAO-002 / Trạng thái: Kế hoạch / Đầu ra: Nhật ký diễn tập / Bằng chứng: chưa có trong repository tại 24/09/2026 / Quan hệ gồm FS, SS, FF và SF. Việc ghi dữ liệu đi qua API, kiểm quyền, ghi audit, rồi mới phát Socket.IO.
- 168: Mã: S4-BAO-007 / Trạng thái: Kế hoạch / Đầu ra: Biên bản restore / Bằng chứng: chưa có trong repository tại 24/09/2026 / Quan hệ gồm FS, SS, FF và SF. Việc ghi dữ liệu đi qua API, kiểm quyền, ghi audit, rồi mới phát Socket.IO.
- 169: Mã: S4-BAO-004 / Trạng thái: Kế hoạch / Đầu ra: Kết quả smoke / Bằng chứng: chưa có trong repository tại 24/09/2026 / Quan hệ gồm FS, SS, FF và SF. Việc ghi dữ liệu đi qua API, kiểm quyền, ghi audit, rồi mới phát Socket.IO.
- 170: Mã: S4-BAO-008 / Trạng thái: Kế hoạch / Đầu ra: Sample log đã redact / Bằng chứng: chưa có trong repository tại 24/09/2026 / Quan hệ gồm FS, SS, FF và SF. Việc ghi dữ liệu đi qua API, kiểm quyền, ghi audit, rồi mới phát Socket.IO.
- 171: Mã: S4-BAO-005 / Trạng thái: Kế hoạch / Đầu ra: APK và bằng chứng cài / Bằng chứng: chưa có trong repository tại 24/09/2026 / Quan hệ gồm FS, SS, FF và SF. Việc ghi dữ liệu đi qua API, kiểm quyền, ghi audit, rồi mới phát Socket.IO.
- 173: Mã: S4-HOANG-001 / Trạng thái: Kế hoạch / Đầu ra: Ma trận pass/fail / Bằng chứng: chưa có trong repository tại 24/09/2026 / Quan hệ gồm FS, SS, FF và SF. Việc ghi dữ liệu đi qua API, kiểm quyền, ghi audit, rồi mới phát Socket.IO.
- 174: Mã: S4-HOANG-002 / Trạng thái: Kế hoạch / Đầu ra: Danh sách defect responsive / Bằng chứng: chưa có trong repository tại 24/09/2026 / Quan hệ gồm FS, SS, FF và SF. Việc ghi dữ liệu đi qua API, kiểm quyền, ghi audit, rồi mới phát Socket.IO.
- 175: Mã: S4-HOANG-003 / Trạng thái: Kế hoạch / Đầu ra: Checklist accessibility / Bằng chứng: chưa có trong repository tại 24/09/2026 / Quan hệ gồm FS, SS, FF và SF. Việc ghi dữ liệu đi qua API, kiểm quyền, ghi audit, rồi mới phát Socket.IO.
- 176: Mã: S4-HOANG-004 / Trạng thái: Kế hoạch / Đầu ra: Nhật ký visual review / Bằng chứng: chưa có trong repository tại 24/09/2026 / Quan hệ gồm FS, SS, FF và SF. Việc ghi dữ liệu đi qua API, kiểm quyền, ghi audit, rồi mới phát Socket.IO.
- 177: Mã: S4-HOANG-005 / Trạng thái: Kế hoạch / Đầu ra: Biên bản UAT / Bằng chứng: chưa có trong repository tại 24/09/2026 / Quan hệ gồm FS, SS, FF và SF. Việc ghi dữ liệu đi qua API, kiểm quyền, ghi audit, rồi mới phát Socket.IO.
- 178: Mã: S4-GATE / Trạng thái: Kế hoạch / Đầu ra: Biên bản bàn giao / Bằng chứng: chưa có trong repository tại 24/09/2026 / Quan hệ gồm FS, SS, FF và SF. Việc ghi dữ liệu đi qua API, kiểm quyền, ghi audit, rồi mới phát Socket.IO.
